| id | p6_code | name | wbs | start | finish | baseline_start | baseline_finish | duration | pct_complete | status | cost_code | builder_cost | client_price | source | seq_no | bldg_seq | total_float | actual_start | actual_finish | critical |
| --- | --- | --- | --- | --- | --- | --- | --- | --- | --- | --- | --- | --- | --- | --- | --- | --- | --- | --- | --- | --- |
| A0001 | A0001 | Bldg 1 - Layout - Labor | Bldg 1 | 2026-05-16 | 2026-05-16 | 2026-05-16 | 2026-05-18 | 1 | 0 | Not Started | 101 - Layout - Labor | 900.25 | 1308.51 | bt_estimate | 1 | 1 | 137 |  |  |  |
| A0002 | A0002 | Bldg 1 - Framing - Labor | Bldg 1 | 2026-05-18 | 2026-05-22 | 2026-05-18 | 2026-05-26 | 5 | 100 | Complete | 102 - Framing - Labor | 9902.75 | 5757.46 | bt_estimate | 2 | 1 | 137 | 2026-05-18 | 2026-05-17 |  |
| A0003 | A0003 | Bldg 1 - Sheathing - Labor | Bldg 1 | 2026-05-25 | 2026-05-27 | 2026-05-26 | 2026-05-27 | 3 | 100 | Complete | 103 - Sheathing - Labor | 900.25 | 1281.51 | bt_estimate | 3 | 1 | 136 | 2026-05-26 | 2026-05-17 |  |
| A0004 | A0004 | Bldg 1 - Roof Truss - Labor | Bldg 1 | 2026-05-28 | 2026-06-03 | 2026-05-27 | 2026-06-03 | 6 | 100 | Complete | 107 - Roof Truss - Labor | 9587.97 | 11710.75 | bt_estimate | 4 | 1 | 136 | 2026-05-27 | 2026-05-17 |  |
| A0005 | A0005 | Bldg 1 - Hardware - Labor | Bldg 1 | 2026-06-03 | 2026-06-04 | 2026-06-03 | 2026-06-04 | 1 | 100.0 | Complete | 109 - Hardware - Labor | 900.25 | 1281.51 | bt_estimate | 5 | 1 | 136 | 2026-06-03 | 2026-05-17 |  |
| A0006 | A0006 | Bldg 1 - House Wrap - Labor | Bldg 1 | 2026-06-04 | 2026-06-05 | 2026-06-04 | 2026-06-05 | 1 | 100.0 | Complete | 110 - House Wrap - Labor | 2160.0 | 2534.76 | bt_estimate | 6 | 1 | 136 | 2026-06-04 | 2026-05-17 |  |
| A0007 | A0007 | Bldg 1 - Punchout - Labor | Bldg 1 | 2026-06-05 | 2026-06-06 | 2026-06-05 | 2026-06-06 | 1 | 100.0 | Complete | 115 - Punchout - Labor | 900.25 | 1010.71 | bt_estimate | 7 | 1 | 136 | 2026-06-05 | 2026-05-17 |  |
| A0008 | A0008 | Bldg 1 - Window - Labor | Bldg 1 | 2026-06-06 | 2026-06-08 | 2026-06-06 | 2026-06-08 | 1 | 100.0 | Complete | 112 - Window - Labor | 1220.0 | 1457.96 | bt_estimate | 8 | 1 | 136 | 2026-06-06 | 2026-05-17 |  |
| A0009 | A0009 | Bldg 1 - Roofing - Labor | Bldg 1 | 2026-06-09 | 2026-06-16 | 2026-06-08 | 2026-06-16 | 7 | 86.05 | In Progress | 151 - Roofing - Labor | 11175.0 | 16041.16 | bt_estimate | 9 | 1 | 136 | 2026-06-08 |  |  |
| A0010 | A0010 | Bldg 2 - Layout - Labor | Bldg 2 | 2026-06-18 | 2026-06-24 | 2026-05-16 | 2026-05-25 | 6 | 60 | In Progress | 101 - Layout - Labor | 11227.29 | 16382.47 | bt_estimate | 1 | 2 | 81 | 2026-05-16 |  |  |
| A0011 | A0011 | Bldg 2 - Framing - Labor | Bldg 2 | 2026-06-25 | 2026-07-04 | 2026-05-25 | 2026-07-02 | 9 | 100 | Complete | 102 - Framing - Labor | 49400.01 | 71689.29 | bt_estimate | 2 | 2 | 81 | 2026-05-25 | 2026-05-17 |  |
| A0012 | A0012 | Bldg 2 - Sheathing - Labor | Bldg 2 | 2026-07-06 | 2026-07-17 | 2026-07-02 | 2026-07-15 | 11 | 75.0 | In Progress | 103 - Sheathing - Labor | 16327.29 | 22532.59 | bt_estimate | 3 | 2 | 81 | 2026-07-02 |  |  |
| A0013 | A0013 | Bldg 2 - Floor Truss - Labor | Bldg 2 | 2026-07-18 | 2026-07-22 | 2026-07-15 | 2026-08-10 | 4 | 100 | Complete | 106 - Floor Truss - Labor | 32933.34 | 36903.45 | bt_estimate | 4 | 2 | 80 | 2026-07-15 | 2026-05-17 |  |
| A0014 | A0014 | Bldg 2 - Roof Truss - Labor | Bldg 2 | 2026-07-23 | 2026-07-26 | 2026-08-10 | 2026-09-15 | 3 | 100 | Complete | 107 - Roof Truss - Labor | 45865.12 | 56869.86 | bt_estimate | 5 | 2 | 80 | 2026-08-10 | 2026-05-17 |  |
| A0015 | A0015 | Bldg 2 - Hardware - Labor | Bldg 2 | 2026-07-27 | 2026-08-04 | 2026-09-15 | 2026-09-23 | 8 | 100 | Complete | 109 - Hardware - Labor | 11227.29 | 16855.88 | bt_estimate | 6 | 2 | 73 | 2026-09-15 | 2026-05-17 |  |
| A0016 | A0016 | Bldg 2 - House Wrap - Labor | Bldg 2 | 2026-09-23 | 2026-09-29 | 2026-09-23 | 2026-09-29 | 5 | 100.0 | Complete | 110 - House Wrap - Labor | 8100.0 | 9741.87 | bt_estimate | 7 | 2 | 11 | 2026-09-23 | 2026-05-17 |  |
| A0017 | A0017 | Bldg 2 - Punchout - Labor | Bldg 2 | 2026-09-30 | 2026-10-07 | 2026-09-29 | 2026-10-07 | 7 | 16.83 | In Progress | 115 - Punchout - Labor | 11227.29 | 13419.58 | bt_estimate | 8 | 2 | 11 | 2026-09-29 |  |  |
| A0018 | A0018 | Bldg 2 - Balcony - Labor | Bldg 2 | 2026-10-07 | 2026-10-21 | 2026-10-07 | 2026-10-21 | 12 | 100.0 | Complete | 108 - Balcony - Labor | 18720.0 | 19982.74 | bt_estimate | 9 | 2 | 11 | 2026-10-07 | 2026-05-17 |  |
| A0019 | A0019 | Bldg 2 - Window - Labor | Bldg 2 | 2026-10-21 | 2026-10-28 | 2026-10-21 | 2026-10-28 | 6 | 100.0 | Complete | 112 - Window - Labor | 9240.0 | 10691.61 | bt_estimate | 10 | 2 | 11 | 2026-10-21 | 2026-05-17 |  |
| A0020 | A0020 | Bldg 2 - Roofing - Labor | Bldg 2 | 2026-10-29 | 2026-11-09 | 2026-10-28 | 2026-11-09 | 10 | 75.04 | In Progress | 151 - Roofing - Labor | 15195.0 | 21208.0 | bt_estimate | 11 | 2 | 11 | 2026-10-28 |  |  |
| A0021 | A0021 | Bldg 3 - Layout - Labor | Bldg 3 | 2026-05-16 | 2026-05-26 | 2026-05-16 | 2026-05-26 | 8 | 100.0 | Complete | 101 - Layout - Labor | 11657.25 | 17158.31 | bt_estimate | 1 | 3 | 31 | 2026-05-16 | 2026-05-17 |  |
| A0022 | A0022 | Bldg 3 - Framing - Labor | Bldg 3 | 2026-05-26 | 2026-05-28 | 2026-05-26 | 2026-07-04 | 3 | 100 | Complete | 102 - Framing - Labor | 51291.9 | 72000.15 | bt_estimate | 2 | 3 | 32 | 2026-05-26 | 2026-05-17 |  |
| A0023 | A0023 | Bldg 3 - Sheathing - Labor | Bldg 3 | 2026-05-29 | 2026-06-10 | 2026-07-04 | 2026-07-17 | 11 | 80.81 | In Progress | 103 - Sheathing - Labor | 16757.25 | 22339.91 | bt_estimate | 3 | 3 | 32 | 2026-07-04 |  |  |
| A0024 | A0024 | Bldg 3 - Floor Truss - Labor | Bldg 3 | 2026-07-15 | 2026-08-11 | 2026-07-17 | 2026-08-13 | 24 | 100 | Complete | 106 - Floor Truss - Labor | 34194.6 | 38949.36 | bt_estimate | 4 | 3 | 3 | 2026-07-17 | 2026-05-17 |  |
| A0025 | A0025 | Bldg 3 - Roof Truss - Labor | Bldg 3 | 2026-08-13 | 2026-09-19 | 2026-08-13 | 2026-09-19 | 32 | 100.0 | Complete | 107 - Roof Truss - Labor | 48507.76 | 60097.58 | bt_estimate | 5 | 3 | 1 | 2026-08-13 | 2026-05-17 | True |
| A0026 | A0026 | Bldg 3 - Hardware - Labor | Bldg 3 | 2026-09-21 | 2026-09-29 | 2026-09-19 | 2026-09-29 | 8 | 85.0 | In Progress | 109 - Hardware - Labor | 11657.25 | 17656.07 | bt_estimate | 6 | 3 | 1 | 2026-09-19 |  | True |
| A0027 | A0027 | Bldg 3 - House Wrap - Labor | Bldg 3 | 2026-09-29 | 2026-10-06 | 2026-09-29 | 2026-10-06 | 6 | 100.0 | Complete | 110 - House Wrap - Labor | 8640.0 | 9522.43 | bt_estimate | 7 | 3 | 1 | 2026-09-29 | 2026-05-17 | True |
| A0028 | A0028 | Bldg 3 - Punchout - Labor | Bldg 3 | 2026-10-07 | 2026-10-15 | 2026-10-06 | 2026-10-15 | 8 | 0 | Not Started | 115 - Punchout - Labor | 11657.25 | 14057.09 | bt_estimate | 8 | 3 | 1 |  |  | True |
| A0029 | A0029 | Bldg 3 - Balcony - Labor | Bldg 3 | 2026-10-15 | 2026-10-29 | 2026-10-15 | 2026-10-29 | 12 | 100.0 | Complete | 108 - Balcony - Labor | 18720.0 | 19982.74 | bt_estimate | 9 | 3 | 1 | 2026-10-15 | 2026-05-17 | True |
| A0030 | A0030 | Bldg 3 - Window - Labor | Bldg 3 | 2026-10-29 | 2026-11-07 | 2026-10-29 | 2026-11-07 | 8 | 100.0 | Complete | 112 - Window - Labor | 11550.0 | 13526.98 | bt_estimate | 10 | 3 | 1 | 2026-10-29 | 2026-05-17 | True |
| A0031 | A0031 | Bldg 3 - Roofing - Labor | Bldg 3 | 2026-11-07 | 2026-11-20 | 2026-11-07 | 2026-11-20 | 11 | 100.0 | Complete | 151 - Roofing - Labor | 16799.0 | 34948.48 | bt_estimate | 11 | 3 | 1 | 2026-11-07 | 2026-05-17 | True |
| A0032 | A0032 | Bldg 4 - Layout - Labor | Bldg 4 | 2026-05-16 | 2026-05-25 | 2026-05-16 | 2026-05-25 | 7 | 100.0 | Complete | 101 - Layout - Labor | 11227.29 | 16382.47 | bt_estimate | 1 | 4 | 41 | 2026-05-16 | 2026-05-17 |  |
| A0033 | A0033 | Bldg 4 - Framing - Labor | Bldg 4 | 2026-05-26 | 2026-05-27 | 2026-05-25 | 2026-07-02 | 2 | 89.96 | In Progress | 102 - Framing - Labor | 49400.01 | 65362.8 | bt_estimate | 2 | 4 | 41 | 2026-05-25 |  |  |
| A0034 | A0034 | Bldg 4 - Sheathing - Labor | Bldg 4 | 2026-07-02 | 2026-07-15 | 2026-07-02 | 2026-07-15 | 11 | 100.0 | Complete | 103 - Sheathing - Labor | 16327.29 | 21559.56 | bt_estimate | 3 | 4 | 10 | 2026-07-02 | 2026-05-17 |  |
| A0035 | A0035 | Bldg 4 - Floor Truss - Labor | Bldg 4 | 2026-07-15 | 2026-08-10 | 2026-07-15 | 2026-08-10 | 22 | 100.0 | Complete | 106 - Floor Truss - Labor | 32933.34 | 36903.45 | bt_estimate | 4 | 4 | 10 | 2026-07-15 | 2026-05-17 |  |
| A0036 | A0036 | Bldg 4 - Roof Truss - Labor | Bldg 4 | 2026-08-10 | 2026-09-16 | 2026-08-10 | 2026-09-16 | 32 | 100.0 | Complete | 107 - Roof Truss - Labor | 48507.76 | 56872.43 | bt_estimate | 5 | 4 | 10 | 2026-08-10 | 2026-05-17 |  |
| A0037 | A0037 | Bldg 4 - Hardware - Labor | Bldg 4 | 2026-09-16 | 2026-09-24 | 2026-09-16 | 2026-09-24 | 7 | 100.0 | Complete | 109 - Hardware - Labor | 11227.29 | 16855.88 | bt_estimate | 6 | 4 | 10 | 2026-09-16 | 2026-05-17 |  |
| A0038 | A0038 | Bldg 4 - House Wrap - Labor | Bldg 4 | 2026-09-24 | 2026-09-30 | 2026-09-24 | 2026-09-30 | 5 | 100.0 | Complete | 110 - House Wrap - Labor | 8100.0 | 9741.87 | bt_estimate | 7 | 4 | 10 | 2026-09-24 | 2026-05-17 |  |
| A0039 | A0039 | Bldg 4 - Punchout - Labor | Bldg 4 | 2026-10-01 | 2026-10-08 | 2026-09-30 | 2026-10-08 | 7 | 0 | Not Started | 115 - Punchout - Labor | 11227.29 | 13419.58 | bt_estimate | 8 | 4 | 10 |  |  |  |
| A0040 | A0040 | Bldg 4 - Balcony - Labor | Bldg 4 | 2026-10-09 | 2026-10-22 | 2026-10-08 | 2026-10-22 | 12 | 73.47 | In Progress | 108 - Balcony - Labor | 18720.0 | 19982.74 | bt_estimate | 9 | 4 | 10 | 2026-10-08 |  |  |
| A0041 | A0041 | Bldg 4 - Window - Labor | Bldg 4 | 2026-10-23 | 2026-10-29 | 2026-10-22 | 2026-10-29 | 6 | 0 | Not Started | 112 - Window - Labor | 9240.0 | 10691.61 | bt_estimate | 10 | 4 | 10 |  |  |  |
| A0042 | A0042 | Bldg 4 - Roofing - Labor | Bldg 4 | 2026-10-30 | 2026-11-10 | 2026-10-29 | 2026-11-10 | 10 | 80.04 | In Progress | 151 - Roofing - Labor | 15195.0 | 26710.73 | bt_estimate | 11 | 4 | 10 | 2026-10-29 |  |  |
| A0043 | A0043 | Bldg 5 - Layout - Labor | Bldg 5 | 2026-05-16 | 2026-05-25 | 2026-05-16 | 2026-05-26 | 8 | 83.33 | In Progress | 101 - Layout - Labor | 11657.25 | 17158.31 | bt_estimate | 1 | 5 | 32 | 2026-05-16 |  |  |
| A0044 | A0044 | Bldg 5 - Framing - Labor | Bldg 5 | 2026-05-26 | 2026-06-01 | 2026-05-26 | 2026-07-04 | 6 | 100 | Complete | 102 - Framing - Labor | 51291.9 | 69497.11 | bt_estimate | 2 | 5 | 32 | 2026-05-26 | 2026-05-17 |  |
| A0045 | A0045 | Bldg 5 - Sheathing - Labor | Bldg 5 | 2026-06-03 | 2026-06-16 | 2026-07-04 | 2026-07-17 | 12 | 100 | Complete | 103 - Sheathing - Labor | 16757.25 | 22339.91 | bt_estimate | 3 | 5 | 3 | 2026-07-04 | 2026-05-17 |  |
| A0046 | A0046 | Bldg 5 - Floor Truss - Labor | Bldg 5 | 2026-06-18 | 2026-07-15 | 2026-07-17 | 2026-08-13 | 24 | 100 | Complete | 106 - Floor Truss - Labor | 34194.6 | 38949.36 | bt_estimate | 4 | 5 | 3 | 2026-07-17 | 2026-05-17 |  |
| A0047 | A0047 | Bldg 5 - Roof Truss - Labor | Bldg 5 | 2026-07-16 | 2026-08-20 | 2026-08-13 | 2026-09-18 | 31 | 77.29 | In Progress | 107 - Roof Truss - Labor | 45865.12 | 60099.55 | bt_estimate | 5 | 5 | 3 | 2026-08-13 |  |  |
| A0048 | A0048 | Bldg 5 - Hardware - Labor | Bldg 5 | 2026-08-21 | 2026-08-29 | 2026-09-18 | 2026-09-28 | 8 | 75.0 | In Progress | 109 - Hardware - Labor | 11657.25 | 17656.07 | bt_estimate | 6 | 5 | 3 | 2026-09-18 |  |  |
| A0049 | A0049 | Bldg 5 - House Wrap - Labor | Bldg 5 | 2026-08-31 | 2026-09-05 | 2026-09-28 | 2026-10-05 | 6 | 25.0 | In Progress | 110 - House Wrap - Labor | 8640.0 | 9522.43 | bt_estimate | 7 | 5 | 3 | 2026-09-28 |  |  |
| A0050 | A0050 | Bldg 5 - Punchout - Labor | Bldg 5 | 2026-09-07 | 2026-09-14 | 2026-10-05 | 2026-10-13 | 7 | 0 | Not Started | 115 - Punchout - Labor | 10687.75 | 14056.49 | bt_estimate | 8 | 5 | 3 |  |  |  |
| A0051 | A0051 | Bldg 5 - Balcony - Labor | Bldg 5 | 2026-09-15 | 2026-09-28 | 2026-10-13 | 2026-10-27 | 12 | 71.59 | In Progress | 108 - Balcony - Labor | 18720.0 | 19982.74 | bt_estimate | 9 | 5 | 3 | 2026-10-13 |  |  |
| A0052 | A0052 | Bldg 5 - Window - Labor | Bldg 5 | 2026-09-29 | 2026-10-07 | 2026-10-27 | 2026-11-05 | 8 | 0 | Not Started | 112 - Window - Labor | 11550.0 | 13526.98 | bt_estimate | 10 | 5 | 3 |  |  |  |
| A0053 | A0053 | Bldg 5 - Roofing - Labor | Bldg 5 | 2026-10-08 | 2026-10-20 | 2026-11-05 | 2026-11-18 | 11 | 69.31 | In Progress | 151 - Roofing - Labor | 16799.0 | 33147.52 | bt_estimate | 11 | 5 | 3 | 2026-11-05 |  |  |
| A0054 | A0054 | Bldg 6 - Layout - Labor | Bldg 6 | 2026-05-16 | 2026-05-25 | 2026-05-16 | 2026-05-26 | 8 | 83.33 | In Progress | 101 - Layout - Labor | 11657.25 | 16381.93 | bt_estimate | 1 | 6 | 8 | 2026-05-16 |  |  |
| A0055 | A0055 | Bldg 6 - Framing - Labor | Bldg 6 | 2026-05-26 | 2026-06-08 | 2026-05-26 | 2026-07-04 | 12 | 80.0 | In Progress | 102 - Framing - Labor | 51291.9 | 66841.89 | bt_estimate | 2 | 6 | 8 | 2026-05-26 |  |  |
| A0056 | A0056 | Bldg 6 - Sheathing - Labor | Bldg 6 | 2026-06-09 | 2026-06-22 | 2026-07-04 | 2026-07-17 | 12 | 100 | Complete | 103 - Sheathing - Labor | 16757.25 | 21559.26 | bt_estimate | 3 | 6 | 7 | 2026-07-04 | 2026-05-17 |  |
| A0057 | A0057 | Bldg 6 - Floor Truss - Labor | Bldg 6 | 2026-07-17 | 2026-08-13 | 2026-07-17 | 2026-08-13 | 23 | 100.0 | Complete | 106 - Floor Truss - Labor | 34194.6 | 36902.82 | bt_estimate | 4 | 6 | 7 | 2026-07-17 | 2026-05-17 |  |
| A0058 | A0058 | Bldg 6 - Roof Truss - Labor | Bldg 6 | 2026-08-13 | 2026-09-18 | 2026-08-13 | 2026-09-18 | 31 | 100.0 | Complete | 107 - Roof Truss - Labor | 45865.12 | 56869.86 | bt_estimate | 5 | 6 | 7 | 2026-08-13 | 2026-05-17 |  |
| A0059 | A0059 | Bldg 6 - Hardware - Labor | Bldg 6 | 2026-09-19 | 2026-09-28 | 2026-09-18 | 2026-09-28 | 8 | 0 | Not Started | 109 - Hardware - Labor | 11657.25 | 16855.61 | bt_estimate | 6 | 6 | 7 |  |  |  |
| A0060 | A0060 | Bldg 6 - House Wrap - Labor | Bldg 6 | 2026-09-29 | 2026-10-03 | 2026-09-28 | 2026-10-03 | 5 | 0 | Not Started | 110 - House Wrap - Labor | 8100.0 | 9741.87 | bt_estimate | 7 | 6 | 7 |  |  |  |
| A0061 | A0061 | Bldg 6 - Punchout - Labor | Bldg 6 | 2026-10-05 | 2026-10-12 | 2026-10-03 | 2026-10-12 | 7 | 0 | Not Started | 115 - Punchout - Labor | 10687.75 | 13419.67 | bt_estimate | 8 | 6 | 7 |  |  |  |
| A0062 | A0062 | Bldg 6 - Balcony - Labor | Bldg 6 | 2026-10-13 | 2026-10-26 | 2026-10-12 | 2026-10-26 | 12 | 71.59 | In Progress | 108 - Balcony - Labor | 18720.0 | 19982.74 | bt_estimate | 9 | 6 | 7 | 2026-10-12 |  |  |
| A0063 | A0063 | Bldg 6 - Window - Labor | Bldg 6 | 2026-10-27 | 2026-11-02 | 2026-10-26 | 2026-11-02 | 6 | 0 | Not Started | 112 - Window - Labor | 9240.0 | 10691.61 | bt_estimate | 10 | 6 | 7 |  |  |  |
| A0064 | A0064 | Bldg 6 - Roofing - Labor | Bldg 6 | 2026-11-03 | 2026-11-13 | 2026-11-02 | 2026-11-13 | 10 | 0 | Not Started | 151 - Roofing - Labor | 15195.0 | 30757.99 | bt_estimate | 11 | 6 | 7 |  |  |  |
| A0065 | A0065 | Bldg 7 - Layout - Labor | Bldg 7 | 2026-05-16 | 2026-05-22 | 2026-05-16 | 2026-05-23 | 6 | 83.33 | In Progress | 101 - Layout - Labor | 8748.75 | 13025.43 | bt_estimate | 1 | 7 | 39 | 2026-05-16 |  |  |
| A0066 | A0066 | Bldg 7 - Framing - Labor | Bldg 7 | 2026-05-23 | 2026-06-22 | 2026-05-23 | 2026-06-23 | 26 | 75.0 | In Progress | 102 - Framing - Labor | 38494.5 | 50126.25 | bt_estimate | 2 | 7 | 39 | 2026-05-23 |  |  |
| A0067 | A0067 | Bldg 7 - Sheathing - Labor | Bldg 7 | 2026-06-23 | 2026-07-02 | 2026-06-23 | 2026-07-03 | 9 | 60.0 | In Progress | 103 - Sheathing - Labor | 13428.75 | 17766.09 | bt_estimate | 3 | 7 | 39 | 2026-06-23 |  |  |
| A0068 | A0068 | Bldg 7 - Floor Truss - Labor | Bldg 7 | 2026-07-03 | 2026-07-23 | 2026-07-03 | 2026-07-23 | 17 | 100.0 | Complete | 106 - Floor Truss - Labor | 25663.0 | 30676.27 | bt_estimate | 4 | 7 | 38 | 2026-07-03 | 2026-05-17 |  |
| A0069 | A0069 | Bldg 7 - Roof Truss - Labor | Bldg 7 | 2026-07-24 | 2026-08-21 | 2026-07-23 | 2026-08-21 | 25 | 9.11 | In Progress | 107 - Roof Truss - Labor | 37365.16 | 46488.01 | bt_estimate | 5 | 7 | 38 | 2026-07-23 |  |  |
| A0070 | A0070 | Bldg 7 - Hardware - Labor | Bldg 7 | 2026-08-22 | 2026-08-28 | 2026-08-21 | 2026-08-28 | 6 | 0 | Not Started | 109 - Hardware - Labor | 8748.75 | 13401.34 | bt_estimate | 6 | 7 | 38 |  |  |  |

| id | p6_code | name | wbs | start | finish | baseline_start | baseline_finish | duration | pct_complete | status | cost_code | builder_cost | client_price | source | seq_no | bldg_seq | total_float | actual_start | actual_finish |
| --- | --- | --- | --- | --- | --- | --- | --- | --- | --- | --- | --- | --- | --- | --- | --- | --- | --- | --- | --- |
| A0071 | A0071 | Bldg 7 - House Wrap - Labor | Bldg 7 | 2026-08-29 | 2026-09-03 | 2026-08-28 | 2026-09-03 | 5 | 0 | Not Started | 110 - House Wrap - Labor | 7020.0 | 7448.69 | bt_estimate | 7 | 7 | 38 |  |  |
| A0072 | A0072 | Bldg 7 - Punchout - Labor | Bldg 7 | 2026-09-04 | 2026-09-10 | 2026-09-03 | 2026-09-10 | 6 | 0 | Not Started | 115 - Punchout - Labor | 9718.25 | 10669.67 | bt_estimate | 8 | 7 | 38 |  |  |
| A0073 | A0073 | Bldg 7 - Balcony - Labor | Bldg 7 | 2026-09-11 | 2026-09-19 | 2026-09-10 | 2026-09-19 | 8 | 73.47 | In Progress | 108 - Balcony - Labor | 12480.0 | 13988.45 | bt_estimate | 9 | 7 | 38 | 2026-09-10 |  |
| A0074 | A0074 | Bldg 7 - Window - Labor | Bldg 7 | 2026-09-21 | 2026-09-28 | 2026-09-19 | 2026-09-28 | 7 | 0 | Not Started | 112 - Window - Labor | 10080.0 | 11582.6 | bt_estimate | 10 | 7 | 38 |  |  |
| A0075 | A0075 | Bldg 7 - Roofing - Labor | Bldg 7 | 2026-09-29 | 2026-10-08 | 2026-09-28 | 2026-10-08 | 9 | 0 | Not Started | 151 - Roofing - Labor | 13768.8 | 20917.38 | bt_estimate | 11 | 7 | 38 |  |  |
| A0076 | A0076 | Bldg 8 - Layout - Labor | Bldg 8 | 2026-05-16 | 2026-05-22 | 2026-05-16 | 2026-05-23 | 6 | 83.33 | In Progress | 101 - Layout - Labor | 8748.75 | 13025.43 | bt_estimate | 1 | 8 | 39 | 2026-05-16 |  |
| A0077 | A0077 | Bldg 8 - Framing - Labor | Bldg 8 | 2026-05-23 | 2026-06-22 | 2026-05-23 | 2026-06-23 | 26 | 66.67 | In Progress | 102 - Framing - Labor | 38494.5 | 51485.11 | bt_estimate | 2 | 8 | 39 | 2026-05-23 |  |
| A0078 | A0078 | Bldg 8 - Sheathing - Labor | Bldg 8 | 2026-06-23 | 2026-07-02 | 2026-06-23 | 2026-07-03 | 9 | 49.54 | In Progress | 103 - Sheathing - Labor | 13428.75 | 17766.09 | bt_estimate | 3 | 8 | 39 | 2026-06-23 |  |
| A0079 | A0079 | Bldg 8 - Floor Truss - Labor | Bldg 8 | 2026-07-03 | 2026-07-23 | 2026-07-03 | 2026-07-23 | 17 | 100.0 | Complete | 106 - Floor Truss - Labor | 25663.0 | 30676.27 | bt_estimate | 4 | 8 | 38 | 2026-07-03 | 2026-05-17 |
| A0080 | A0080 | Bldg 8 - Roof Truss - Labor | Bldg 8 | 2026-07-24 | 2026-08-21 | 2026-07-23 | 2026-08-21 | 25 | 9.11 | In Progress | 107 - Roof Truss - Labor | 37365.16 | 46488.01 | bt_estimate | 5 | 8 | 38 | 2026-07-23 |  |
| A0081 | A0081 | Bldg 8 - Hardware - Labor | Bldg 8 | 2026-08-22 | 2026-08-28 | 2026-08-21 | 2026-08-28 | 6 | 0 | Not Started | 109 - Hardware - Labor | 8748.75 | 13401.34 | bt_estimate | 6 | 8 | 38 |  |  |
| A0082 | A0082 | Bldg 8 - House Wrap - Labor | Bldg 8 | 2026-08-29 | 2026-09-03 | 2026-08-28 | 2026-09-03 | 5 | 0 | Not Started | 110 - House Wrap - Labor | 7020.0 | 7448.69 | bt_estimate | 7 | 8 | 38 |  |  |
| A0083 | A0083 | Bldg 8 - Punchout - Labor | Bldg 8 | 2026-09-04 | 2026-09-10 | 2026-09-03 | 2026-09-10 | 6 | 0 | Not Started | 115 - Punchout - Labor | 9718.25 | 10669.67 | bt_estimate | 8 | 8 | 38 |  |  |
| A0084 | A0084 | Bldg 8 - Balcony - Labor | Bldg 8 | 2026-09-11 | 2026-09-19 | 2026-09-10 | 2026-09-19 | 8 | 34.62 | In Progress | 108 - Balcony - Labor | 12480.0 | 13988.45 | bt_estimate | 9 | 8 | 38 | 2026-09-10 |  |
| A0085 | A0085 | Bldg 8 - Window - Labor | Bldg 8 | 2026-09-21 | 2026-09-28 | 2026-09-19 | 2026-09-28 | 7 | 0 | Not Started | 112 - Window - Labor | 10080.0 | 11582.6 | bt_estimate | 10 | 8 | 38 |  |  |
| A0086 | A0086 | Bldg 8 - Roofing - Labor | Bldg 8 | 2026-09-29 | 2026-10-08 | 2026-09-28 | 2026-10-08 | 9 | 0 | Not Started | 151 - Roofing - Labor | 13768.8 | 18329.34 | bt_estimate | 11 | 8 | 38 |  |  |
| A0087 | A0087 | Bldg 9 - Layout - Labor | Bldg 9 | 2026-05-16 | 2026-05-19 | 2026-05-16 | 2026-05-18 | 3 | 0 | Not Started | 101 - Layout - Labor | 110.25 | 160.23 | bt_estimate | 1 | 9 | 151 |  |  |
| A0088 | A0088 | Bldg 9 - Framing - Labor | Bldg 9 | 2026-05-18 | 2026-05-19 | 2026-05-18 | 2026-05-19 | 2 | 100 | Complete | 102 - Framing - Labor | 485.1 | 705.0 | bt_estimate | 2 | 9 | 153 | 2026-05-18 | 2026-05-17 |
| A0089 | A0089 | Bldg 9 - Sheathing - Labor | Bldg 9 | 2026-05-19 | 2026-05-20 | 2026-05-19 | 2026-05-20 | 1 | 100.0 | Complete | 103 - Sheathing - Labor | 110.25 | 192.94 | bt_estimate | 3 | 9 | 153 | 2026-05-19 | 2026-05-17 |
| A0090 | A0090 | Bldg 9 - Roof Truss - Labor | Bldg 9 | 2026-05-20 | 2026-05-21 | 2026-05-20 | 2026-05-21 | 1 | 100.0 | Complete | 107 - Roof Truss - Labor | 821.1 | 1002.89 | bt_estimate | 4 | 9 | 153 | 2026-05-20 | 2026-05-17 |
| A0091 | A0091 | Bldg 9 - Hardware - Labor | Bldg 9 | 2026-05-22 | 2026-05-22 | 2026-05-21 | 2026-05-22 | 1 | 0 | Not Started | 109 - Hardware - Labor | 110.25 | 156.91 | bt_estimate | 5 | 9 | 153 |  |  |
| A0092 | A0092 | Bldg 9 - House Wrap - Labor | Bldg 9 | 2026-05-23 | 2026-05-23 | 2026-05-22 | 2026-05-23 | 1 | 0 | Not Started | 110 - House Wrap - Labor | 180.0 | 257.72 | bt_estimate | 6 | 9 | 153 |  |  |
| A0093 | A0093 | Bldg 9 - Punchout - Labor | Bldg 9 | 2026-05-25 | 2026-05-25 | 2026-05-23 | 2026-05-25 | 1 | 0 | Not Started | 115 - Punchout - Labor | 110.25 | 123.76 | bt_estimate | 7 | 9 | 153 |  |  |
| A0094 | A0094 | Bldg 9 - Window - Labor | Bldg 9 | 2026-05-26 | 2026-05-26 | 2026-05-25 | 2026-05-26 | 1 | 0 | Not Started | 112 - Window - Labor | 70.0 | 324.0 | bt_estimate | 8 | 9 | 153 |  |  |
| A0095 | A0095 | Bldg 9 - Roofing - Labor | Bldg 9 | 2026-05-27 | 2026-05-27 | 2026-05-26 | 2026-05-27 | 1 | 0 | Not Started | 151 - Roofing - Labor | 1188.99 | 1116.99 | bt_estimate | 9 | 9 | 153 |  |  |

Links (id, pred_id, succ_id, type, lag_days):
- 1 A0001 A0002 FS 0
- 2 A0002 A0003 FS 0
- 3 A0003 A0004 FS 0
- 4 A0004 A0005 FS 0
- 5 A0005 A0006 FS 0
- 6 A0006 A0007 FS 0
- 7 A0007 A0008 FS 0
- 8 A0008 A0009 FS 0
- 9 A0010 A0011 FS 0
- 10 A0011 A0012 FS 0
- 11 A0012 A0013 FS 0
- 12 A0013 A0014 FS 0
- 13 A0014 A0015 FS 0
- 14 A0015 A0016 FS 0
- 15 A0016 A0017 FS 0
- 16 A0017 A0018 FS 0
- 17 A0018 A0019 FS 0
- 18 A0019 A0020 FS 0
- 19 A0021 A0022 FS 0
- 20 A0022 A0023 FS 0
- 21 A0023 A0024 FS 0
- 22 A0024 A0025 FS 0
- 23 A0025 A0026 FS 0
- 24 A0026 A0027 FS 0
- 25 A0027 A0028 FS 0
- 26 A0028 A0029 FS 0
- 27 A0029 A0030 FS 0
- 28 A0030 A0031 FS 0
- 29 A0032 A0033 FS 0
- 30 A0033 A0034 FS 0
- 31 A0034 A0035 FS 0
- 32 A0035 A0036 FS 0
- 33 A0036 A0037 FS 0
- 34 A0037 A0038 FS 0
- 35 A0038 A0039 FS 0
- 36 A0039 A0040 FS 0
- 37 A0040 A0041 FS 0
- 38 A0041 A0042 FS 0
- 39 A0043 A0044 FS 0
- 40 A0044 A0045 FS 0
- 41 A0045 A0046 FS 0
- 42 A0046 A0047 FS 0
- 43 A0047 A0048 FS 0
- 44 A0048 A0049 FS 0
- 45 A0049 A0050 FS 0
- 46 A0050 A0051 FS 0
- 47 A0051 A0052 FS 0
- 48 A0052 A0053 FS 0
- 49 A0054 A0055 FS 0
- 50 A0055 A0056 FS 0
- 51 A0056 A0057 FS 0
- 52 A0057 A0058 FS 0
- 53 A0058 A0059 FS 0
- 54 A0059 A0060 FS 0
- 55 A0060 A0061 FS 0
- 56 A0061 A0062 FS 0
- 57 A0062 A0063 FS 0
- 58 A0063 A0064 FS 0
- 59 A0065 A0066 FS 0
- 60 A0066 A0067 FS 0
- 61 A0067 A0068 FS 0
- 62 A0068 A0069 FS 0
- 63 A0069 A0070 FS 0
- 64 A0070 A0071 FS 0
- 65 A0071 A0072 FS 0
- 66 A0072 A0073 FS 0
- 67 A0073 A0074 FS 0
- 68 A0074 A0075 FS 0
- 69 A0076 A0077 FS 0
- 70 A0077 A0078 FS 0
- 71 A0078 A0079 FS 0
- 72 A0079 A0080 FS 0
- 73 A0080 A0081 FS 0
- 74 A0081 A0082 FS 0
- 75 A0082 A0083 FS 0
- 76 A0083 A0084 FS 0
- 77 A0084 A0085 FS 0
- 78 A0085 A0086 FS 0
- 79 A0087 A0088 FS 0
- 80 A0088 A0089 FS 0
- 81 A0089 A0090 FS 0
- 82 A0090 A0091 FS 0
- 83 A0091 A0092 FS 0
- 84 A0092 A0093 FS 0
- 85 A0093 A0094 FS 0
- 86 A0094 A0095 FS 0
