# Willow way village

Schedule from Primavera P6, 2026-05-16 to 2026-08-07, data date 2026-05-16, A marks actual dates.
Must finish by 2026-08-13

## Schedule

| ID | WBS | Activity | Duration | Start | Finish | Predecessors | Complete | Remaining | Planned start | Planned finish | Total float | Constraint |
| --- | --- | --- | --- | --- | --- | --- | --- | --- | --- | --- | --- | --- |
|  | Building VA (North) | **Building VA (North)** |  | 2026-05-16 | 2026-07-03 |  |  |  |  |  |  |  |
| A0001 |  | Building VA (North) - Layout - Labor | 7d | 2026-05-16 A | 2026-05-17 A |  | 100% |  | 2026-05-16 | 2026-05-22 |  |  |
| A0002 |  | Building VA (North) - Framing - Labor | 3d | 2026-05-22 A | 2026-05-17 A | A0001 | 100% |  | 2026-05-16 | 2026-05-25 |  |  |
| A0004 |  | Building VA (North) - Shear Wall - Labor | 2d | 2026-06-03 | 2026-06-04 | A0003 |  |  |  |  | 0d | as late as possible |
| A0003 |  | Building VA (North) - Sheathing - Labor | 1d | 2026-06-18 A | 2026-05-17 A | A0002 SS | 100% |  | 2026-05-27 | 2026-06-02 |  |  |
| A0005 |  | Building VA (North) - Floor Truss - Labor | 3d | 2026-06-25 A | 2026-05-17 A | A0004 | 100% |  | 2026-06-08 | 2026-06-10 |  |  |
| A0006 |  | Building VA (North) - Roof Truss - Labor | 2d | 2026-07-10 A | 2026-05-17 A | A0005 | 100% |  | 2026-06-12 | 2026-06-13 |  |  |
| A0007 |  | Building VA (North) - Hardware - Labor | 2d | 2026-07-28 A | 2026-05-17 A | A0006 | 100% |  | 2026-06-15 | 2026-06-16 |  |  |
| A0008 |  | Building VA (North) - House Wrap - Labor | 2d | 2026-08-03 A | 2026-05-17 A | A0007 FS+1d | 100% |  | 2026-06-16 | 2026-06-17 |  |  |
| A0009 |  | Building VA (North) - Stair Labor | 2d | 2026-08-05 A | 2026-05-17 A | A0008 | 100% |  | 2026-06-26 | 2026-06-27 |  |  |
| A0010 |  | Building VA (North) - Punchout - Labor | 5d | 2026-08-06 A | 2026-07-03 | A0009 | 40% | 3.02d | 2026-06-29 | 2026-07-03 | 0d |  |
|  | Building VA (South) | **Building VA (South)** |  | 2026-05-16 | 2026-06-26 |  |  |  |  |  |  |  |
| A0011 |  | Building VA (South) - Layout - Labor | 5d | 2026-05-16 A | 2026-05-17 A |  | 100% |  | 2026-05-16 | 2026-05-22 |  |  |
| A0012 |  | Building VA (South) - Framing - Labor | 5d | 2026-05-22 A | 2026-05-17 A | A0011 | 100% |  | 2026-05-22 | 2026-05-27 |  |  |
| A0013 |  | Building VA (South) - Sheathing - Labor | 5d | 2026-06-18 A | 2026-05-17 A | A0012 | 100% |  | 2026-06-18 | 2026-06-24 |  |  |
| A0014 |  | Building VA (South) - Shear Wall - Labor | 2d | 2026-06-25 | 2026-06-26 | A0013 |  |  |  |  | 0d | as late as possible |
| A0015 |  | Building VA (South) - Floor Truss - Labor | 13d | 2026-06-26 A | 2026-05-17 A | A0014 | 100% |  | 2026-06-26 | 2026-07-11 |  |  |
| A0016 |  | Building VA (South) - Roof Truss - Labor | 15d | 2026-07-11 A | 2026-05-17 A | A0015 | 100% |  | 2026-07-11 | 2026-07-29 |  |  |
| A0017 |  | Building VA (South) - Hardware - Labor | 5d | 2026-07-29 A | 2026-05-17 A | A0016 | 100% |  | 2026-07-29 | 2026-08-04 |  |  |
| A0018 |  | Building VA (South) - House Wrap - Labor | 2d | 2026-08-04 A | 2026-05-17 A | A0017 | 100% |  | 2026-08-04 | 2026-08-06 |  |  |
| A0019 |  | Building VA (South) - Stair Labor | 1d | 2026-08-06 A | 2026-05-17 A | A0018 | 100% |  | 2026-08-06 | 2026-08-07 |  |  |
| A0020 |  | Building VA (South) - Punchout - Labor | 5d | 2026-08-07 A | 2026-05-17 A | A0019 | 100% |  | 2026-08-07 | 2026-08-13 |  |  |
|  | Club house VB (North | **Club house VB (North)** |  | 2026-05-16 | 2026-06-05 |  |  |  |  |  |  |  |
| A0021 |  | Club house VB (North) - Layout - Labor | 1d | 2026-05-16 A | 2026-05-17 A |  | 100% |  | 2026-05-16 | 2026-05-18 |  |  |
| A0022 |  | Club house VB (North) - Framing - Labor | 4d | 2026-05-18 A | 2026-05-17 A | A0021 | 100% |  | 2026-05-18 | 2026-05-22 |  |  |
| A0023 |  | Club house VB (North) - Sheathing - Labor | 1d | 2026-05-22 A | 2026-05-17 A | A0022 | 100% |  | 2026-05-22 | 2026-05-23 |  |  |
| A0024 |  | Club house VB (North) - Shear Wall - Labor | 1d | 2026-05-25 | 2026-05-25 | A0023 |  |  |  |  | 0d | as late as possible |
| A0025 |  | Club house VB (North) - Roof Truss - Labor | 8d | 2026-05-25 A | 2026-05-17 A | A0024 | 100% |  | 2026-05-25 | 2026-06-03 |  |  |
| A0026 |  | Club house VB (North) - Hardware - Labor | 1d | 2026-06-03 A | 2026-05-17 A | A0025 | 100% |  | 2026-06-03 | 2026-06-04 |  |  |
| A0027 |  | Club house VB (North) - House Wrap - Labor | 1d | 2026-06-05 | 2026-06-05 | A0026 |  |  |  |  | 0d | as late as possible |
| A0028 |  | Club house VB (North) - Punchout - Labor | 1d | 2026-06-05 A | 2026-05-17 A | A0027 | 100% |  | 2026-06-05 | 2026-06-06 |  |  |

| ID | WBS | Activity | Duration | Start | Finish | Predecessors | Complete | Remaining | Planned start | Planned finish | Total float | Constraint |
| --- | --- | --- | --- | --- | --- | --- | --- | --- | --- | --- | --- | --- |
|  | Mail Kiosk (North) | **Mail Kiosk (North)** |  | 2026-05-16 | 2026-05-23 |  |  |  |  |  |  |  |
| A0029 |  | Mail Kiosk (North) - Layout - Labor | 1d | 2026-05-16 A | 2026-05-17 A |  | 100% |  | 2026-05-16 | 2026-05-18 |  |  |
| A0030 |  | Mail Kiosk (North) - Framing - Labor | 1d | 2026-05-18 A | 2026-05-17 A | A0029 | 100% |  | 2026-05-18 | 2026-05-19 |  |  |
| A0031 |  | Mail Kiosk (North) - Sheathing - Labor | 1d | 2026-05-19 A | 2026-05-17 A | A0030 | 100% |  | 2026-05-19 | 2026-05-20 |  |  |
| A0032 |  | Mail Kiosk (North) - Roof Truss - Labor | 1d | 2026-05-20 A | 2026-05-17 A | A0031 | 100% |  | 2026-05-20 | 2026-05-21 |  |  |
| A0033 |  | Mail Kiosk (North) - Hardware - Labor | 1d | 2026-05-21 A | 2026-05-17 A | A0032 | 100% |  | 2026-05-21 | 2026-05-22 |  |  |
| A0034 |  | Mail Kiosk (North) - Punchout - Labor | 1d | 2026-05-23 | 2026-05-23 | A0033 |  |  |  |  | 0d | as late as possible |
|  | Mail Kiosk (South) | **Mail Kiosk (South)** |  | 2026-05-16 | 2026-05-23 |  |  |  |  |  |  |  |
| A0035 |  | Mail Kiosk (South) - Layout - Labor | 1d | 2026-05-16 A | 2026-05-17 A |  | 100% |  | 2026-05-16 | 2026-05-18 |  |  |
| A0036 |  | Mail Kiosk (South) - Framing - Labor | 1d | 2026-05-18 A | 2026-05-17 A | A0035 | 100% |  | 2026-05-18 | 2026-05-19 |  |  |
| A0037 |  | Mail Kiosk (South) - Sheathing - Labor | 1d | 2026-05-19 A | 2026-05-17 A | A0036 | 100% |  | 2026-05-19 | 2026-05-20 |  |  |
| A0038 |  | Mail Kiosk (South) - Roof Truss - Labor | 1d | 2026-05-20 A | 2026-05-17 A | A0037 | 100% |  | 2026-05-20 | 2026-05-21 |  |  |
| A0039 |  | Mail Kiosk (South) - Hardware - Labor | 1d | 2026-05-21 A | 2026-05-17 A | A0038 | 100% |  | 2026-05-21 | 2026-05-22 |  |  |
| A0040 |  | Mail Kiosk (South) - Punchout - Labor | 1d | 2026-05-23 | 2026-05-23 | A0039 |  |  |  |  | 0d | as late as possible |
|  | Trash Enclosure (Nor | **Trash Enclosure (North)** |  | 2026-05-16 | 2026-05-22 |  |  |  |  |  |  |  |
| A0041 |  | Trash Enclosure (North) - Layout - Labor | 1d | 2026-05-16 | 2026-05-18 |  |  |  |  |  | 0d | as late as possible |
| A0042 |  | Trash Enclosure (North) - Framing - Labor | 1d | 2026-05-18 A | 2026-05-19 | A0041 | 69% | 0.31d | 2026-05-19 | 2026-05-19 | 0d |  |
| A0043 |  | Trash Enclosure (North) - Sheathing - Labor | 1d | 2026-05-20 | 2026-05-20 | A0042 |  |  |  |  | 0d | as late as possible |
| A0044 |  | Trash Enclosure (North) - Hardware - Labor | 1d | 2026-05-21 | 2026-05-21 | A0043 |  |  |  |  | 0d | as late as possible |
| A0045 |  | Trash Enclosure (North) - Punchout - Labor | 1d | 2026-05-22 | 2026-05-22 | A0044 |  |  |  |  | 0d | as late as possible |
|  | Trash Enclosure (Sou | **Trash Enclosure (South)** |  | 2026-05-16 | 2026-05-29 |  |  |  |  |  |  |  |
| A0046 |  | Trash Enclosure (South) - Layout - Labor | 5d | 2026-05-16 | 2026-05-20 |  |  |  |  |  | 0d | as late as possible |
| A0047 |  | Trash Enclosure (South) - Framing - Labor | 5d | 2026-05-18 A | 2026-05-26 | A0046 | 69% | 1.55d | 2026-05-21 | 2026-05-26 | 0d |  |
| A0048 |  | Trash Enclosure (South) - Sheathing - Labor | 1d | 2026-05-27 | 2026-05-27 | A0047 |  |  |  |  | 0d | as late as possible |
| A0049 |  | Trash Enclosure (South) - Hardware - Labor | 1d | 2026-05-28 | 2026-05-28 | A0048 |  |  |  |  | 0d | as late as possible |
| A0050 |  | Trash Enclosure (South) - Punchout - Labor | 1d | 2026-05-29 | 2026-05-29 | A0049 |  |  |  |  | 0d | as late as possible |
