| id | name | building | level | activity_type | duration | planned_start | planned_finish | baseline_start | baseline_finish | baseline_duration | baseline_cost | pct_complete | status | builder_cost | client_price | profit | quantity | unit | material_types |
| --- | --- | --- | --- | --- | --- | --- | --- | --- | --- | --- | --- | --- | --- | --- | --- | --- | --- | --- | --- |
| A0010 | Club house VB (North) Layout - L1 | Club house VB (North) | L1 | Layout | 3 | 2026-05-18 | 2026-05-21 | 2026-05-18 | 2026-05-21 | 3 | 1445.46 | 0.0 | Not Started | 1445.46 | 1879.1 | 433.64 | 4818.2 | SF |  |
| A0020 | Club house VB (North) Wall Framing - L1 | Club house VB (North) | L1 | Wall Framing | 10 | 2026-05-21 | 2026-05-31 | 2026-05-21 | 2026-05-31 | 10 | 6022.75 | 0.0 | Not Started | 6022.75 | 7829.58 | 1806.83 | 4818.2 | SF | Lumber, LVL |
| A0030 | Club house VB (North) Sheathing - L1 | Club house VB (North) | L1 | Sheathing | 6 | 2026-05-31 | 2026-06-06 | 2026-05-31 | 2026-06-06 | 6 | 1204.55 | 0.0 | Not Started | 1204.55 | 1445.46 | 240.91 | 4818.2 | SF | Panels |
| A0040 | Club house VB (North) Corridor seperation Plywood Sheathing - L1 | Club house VB (North) | L1 | Sheathing | 6 | 2026-06-06 | 2026-06-12 | 2026-06-06 | 2026-06-12 | 6 | 230.0 | 0.0 | Not Started | 230.0 | 276.0 | 46.0 | 23.0 | Sheets | Panels |
| A0050 | Club house VB (North) Zip Sheathing - L1 | Club house VB (North) | L1 | Sheathing | 6 | 2026-06-12 | 2026-06-18 | 2026-06-12 | 2026-06-18 | 6 | 907.5 | 0.0 | Not Started | 907.5 | 1043.63 | 136.13 | 9075.0 | SF | Panels |
| A0060 | Club house VB (North) Roof Truss - L1 | Club house VB (North) | L1 | Roof Truss | 7 | 2026-06-18 | 2026-06-25 | 2026-06-18 | 2026-06-25 | 7 | 12342.0 | 0.0 | Not Started | 12342.0 | 14193.3 | 1851.3 | 6171.0 | SF | LVL |
| A0070 | Club house VB (North) Hardware - L1 | Club house VB (North) | L1 | Hardware | 4 | 2026-06-25 | 2026-06-29 | 2026-06-25 | 2026-06-29 | 4 | 1445.46 | 0.0 | Not Started | 1445.46 | 1662.28 | 216.82 | 4818.2 | SF | Each |
| A0080 | Club house VB (North) Punchout - L1 | Club house VB (North) | L1 | Punchout | 3 | 2026-06-29 | 2026-07-02 | 2026-06-29 | 2026-07-02 | 3 | 1204.55 | 0.0 | Not Started | 1204.55 | 1445.46 | 240.91 | 4818.2 | SF |  |
| A0090 | Building VA (North) Layout - L1 | Building VA (North) | L1 | Layout | 3 | 2026-05-18 | 2026-05-21 | 2026-05-18 | 2026-05-21 | 3 | 2685.6 | 0.0 | Not Started | 2685.6 | 3491.28 | 805.68 | 8952.0 | SF |  |
| A0100 | Building VA (North) Wall Framing - L1 | Building VA (North) | L1 | Wall Framing | 10 | 2026-05-21 | 2026-05-31 | 2026-05-21 | 2026-05-31 | 10 | 11190.0 | 0.0 | Not Started | 11190.0 | 14547.0 | 3357.0 | 8952.0 | SF | Lumber, LVL |
| A0110 | Building VA (North) Sheathing - L1 | Building VA (North) | L1 | Sheathing | 6 | 2026-05-31 | 2026-06-06 | 2026-05-31 | 2026-06-06 | 6 | 2238.0 | 0.0 | Not Started | 2238.0 | 2685.6 | 447.6 | 8952.0 | SF | Panels |
| A0120 | Building VA (North) Corridor seperation Plywood Sheathing - L1 | Building VA (North) | L1 | Sheathing | 6 | 2026-06-06 | 2026-06-12 | 2026-06-06 | 2026-06-12 | 6 | 730.0 | 0.0 | Not Started | 730.0 | 876.0 | 146.0 | 73.0 | Sheets | Panels |
| A0130 | Building VA (North) Stair Plywood Sheathing - L1 | Building VA (North) | L1 | Sheathing | 6 | 2026-06-12 | 2026-06-18 | 2026-06-12 | 2026-06-18 | 6 | 250.0 | 0.0 | Not Started | 250.0 | 300.0 | 50.0 | 25.0 | Sheets | Panels |
| A0140 | Building VA (North) Zip Sheathing - L1 | Building VA (North) | L1 | Sheathing | 6 | 2026-06-18 | 2026-06-24 | 2026-06-18 | 2026-06-24 | 6 | 895.2 | 0.0 | Not Started | 895.2 | 1029.48 | 134.28 | 8952.0 | SF | Panels |
| A0150 | Building VA (North) Roof Truss - L1 | Building VA (North) | L1 | Roof Truss | 7 | 2026-06-24 | 2026-07-01 | 2026-06-24 | 2026-07-01 | 7 | 22530.0 | 0.0 | Not Started | 22530.0 | 25909.5 | 3379.5 | 11265.0 | SF | LVL |
| A0160 | Building VA (North) Hardware - L1 | Building VA (North) | L1 | Hardware | 4 | 2026-07-01 | 2026-07-05 | 2026-07-01 | 2026-07-05 | 4 | 2685.6 | 0.0 | Not Started | 2685.6 | 3088.44 | 402.84 | 8952.0 | SF | Each |
| A0170 | Building VA (North) Stair-landings - L1 | Building VA (North) | L1 | Stair-landings | 2 | 2026-07-05 | 2026-07-07 | 2026-07-05 | 2026-07-07 | 2 | 600.0 | 0.0 | Not Started | 600.0 | 750.0 | 150.0 | 1.0 | Each |  |
| A0180 | Building VA (North) Punchout - L1 | Building VA (North) | L1 | Punchout | 3 | 2026-07-07 | 2026-07-10 | 2026-07-07 | 2026-07-10 | 3 | 2238.0 | 0.0 | Not Started | 2238.0 | 2685.6 | 447.6 | 8952.0 | SF |  |
| A0190 | Building VA (North) Layout - L2 | Building VA (North) | L2 | Layout | 3 | 2026-07-10 | 2026-07-13 | 2026-07-10 | 2026-07-13 | 3 | 2724.12 | 0.0 | Not Started | 2724.12 | 3541.36 | 817.24 | 9080.4 | SF |  |
| A0200 | Building VA (North) Wall Framing - L2 | Building VA (North) | L2 | Wall Framing | 10 | 2026-07-13 | 2026-07-23 | 2026-07-13 | 2026-07-23 | 10 | 11350.5 | 0.0 | Not Started | 11350.5 | 13620.6 | 2270.1 | 9080.4 | SF | Lumber, LVL |
| A0210 | Building VA (North) Sheathing - L2 | Building VA (North) | L2 | Sheathing | 6 | 2026-07-23 | 2026-07-29 | 2026-07-23 | 2026-07-29 | 6 | 2270.1 | 0.0 | Not Started | 2270.1 | 2724.12 | 454.02 | 9080.4 | SF | Panels |
| A0220 | Building VA (North) Corridor seperation Plywood Sheathing - L2 | Building VA (North) | L2 | Sheathing | 6 | 2026-07-29 | 2026-08-04 | 2026-07-29 | 2026-08-04 | 6 | 730.0 | 0.0 | Not Started | 730.0 | 876.0 | 146.0 | 73.0 | Sheets | Panels |
| A0230 | Building VA (North) Stair Plywood Sheathing - L2 | Building VA (North) | L2 | Sheathing | 6 | 2026-08-04 | 2026-08-10 | 2026-08-04 | 2026-08-10 | 6 | 250.0 | 0.0 | Not Started | 250.0 | 300.0 | 50.0 | 25.0 | Sheets | Panels |
| A0240 | Building VA (North) Zip Sheathing - L2 | Building VA (North) | L2 | Sheathing | 6 | 2026-08-10 | 2026-08-16 | 2026-08-10 | 2026-08-16 | 6 | 895.2 | 0.0 | Not Started | 895.2 | 1029.48 | 134.28 | 8952.0 | SF | Panels |
| A0250 | Building VA (North) Unit Floor Truss - L2 | Building VA (North) | L2 | Unit Floor Truss | 5 | 2026-08-16 | 2026-08-21 | 2026-08-16 | 2026-08-21 | 5 | 9246.75 | 0.0 | Not Started | 9246.75 | 11096.1 | 1849.35 | 7397.4 | SF | LVL |
| A0260 | Building VA (North) Corridor Floor Truss - L2 | Building VA (North) | L2 | Corridor Floor Truss | 3 | 2026-08-21 | 2026-08-24 | 2026-08-21 | 2026-08-24 | 3 | 764.69 | 0.0 | Not Started | 764.69 | 879.39 | 114.7 | 611.75 | SF | LVL |
| A0270 | Building VA (North) Hardware - L2 | Building VA (North) | L2 | Hardware | 4 | 2026-08-24 | 2026-08-28 | 2026-08-24 | 2026-08-28 | 4 | 2724.12 | 0.0 | Not Started | 2724.12 | 3132.74 | 408.62 | 9080.4 | SF | Each |
| A0280 | Building VA (North) Stair-landings - L2 | Building VA (North) | L2 | Stair-landings | 2 | 2026-08-28 | 2026-08-30 | 2026-08-28 | 2026-08-30 | 2 | 600.0 | 0.0 | Not Started | 600.0 | 750.0 | 150.0 | 1.0 | Each |  |
| A0290 | Building VA (North) Punchout - L2 | Building VA (North) | L2 | Punchout | 3 | 2026-08-30 | 2026-09-02 | 2026-08-30 | 2026-09-02 | 3 | 2270.1 | 0.0 | Not Started | 2270.1 | 2724.12 | 454.02 | 9080.4 | SF |  |
| A0300 | Building VA (North) Layout - L3 | Building VA (North) | L3 | Layout | 3 | 2026-09-02 | 2026-09-05 | 2026-09-02 | 2026-09-05 | 3 | 2722.5 | 0.0 | Not Started | 2722.5 | 3539.25 | 816.75 | 9075.0 | SF |  |
| A0310 | Building VA (North) Wall Framing - L3 | Building VA (North) | L3 | Wall Framing | 10 | 2026-09-05 | 2026-09-15 | 2026-09-05 | 2026-09-15 | 10 | 11343.75 | 0.0 | Not Started | 11343.75 | 13612.5 | 2268.75 | 9075.0 | SF | Lumber, LVL |
| A0320 | Building VA (North) Sheathing - L3 | Building VA (North) | L3 | Sheathing | 6 | 2026-09-15 | 2026-09-21 | 2026-09-15 | 2026-09-21 | 6 | 2268.75 | 0.0 | Not Started | 2268.75 | 2722.5 | 453.75 | 9075.0 | SF | Panels |
| A0330 | Building VA (North) Corridor seperation Plywood Sheathing - L3 | Building VA (North) | L3 | Sheathing | 6 | 2026-09-21 | 2026-09-27 | 2026-09-21 | 2026-09-27 | 6 | 620.0 | 0.0 | Not Started | 620.0 | 744.0 | 124.0 | 62.0 | Sheets | Panels |
| A0340 | Building VA (North) Stair Plywood Sheathing - L3 | Building VA (North) | L3 | Sheathing | 6 | 2026-09-27 | 2026-10-03 | 2026-09-27 | 2026-10-03 | 6 | 220.0 | 0.0 | Not Started | 220.0 | 264.0 | 44.0 | 22.0 | Sheets | Panels |
| A0350 | Building VA (North) Zip Sheathing - L3 | Building VA (North) | L3 | Sheathing | 6 | 2026-10-03 | 2026-10-09 | 2026-10-03 | 2026-10-09 | 6 | 907.5 | 0.0 | Not Started | 907.5 | 1043.63 | 136.13 | 9075.0 | SF | Panels |
| A0360 | Building VA (North) Unit Floor Truss - L3 | Building VA (North) | L3 | Unit Floor Truss | 5 | 2026-10-09 | 2026-10-14 | 2026-10-09 | 2026-10-14 | 5 | 8174.5 | 0.0 | Not Started | 8174.5 | 9400.68 | 1226.18 | 6539.6 | SF | LVL |
| A0370 | Building VA (North) Corridor Floor Truss - L3 | Building VA (North) | L3 | Corridor Floor Truss | 3 | 2026-10-14 | 2026-10-17 | 2026-10-14 | 2026-10-17 | 3 | 1058.44 | 0.0 | Not Started | 1058.44 | 1217.21 | 158.77 | 846.75 | SF | LVL |
| A0380 | Building VA (North) Hardware - L3 | Building VA (North) | L3 | Hardware | 4 | 2026-10-17 | 2026-10-21 | 2026-10-17 | 2026-10-21 | 4 | 2722.5 | 0.0 | Not Started | 2722.5 | 3130.88 | 408.38 | 9075.0 | SF | Each |
| A0390 | Building VA (North) Stair-landings - L3 | Building VA (North) | L3 | Stair-landings | 2 | 2026-10-21 | 2026-10-23 | 2026-10-21 | 2026-10-23 | 2 | 600.0 | 0.0 | Not Started | 600.0 | 750.0 | 150.0 | 1.0 | Each |  |
| A0400 | Building VA (North) Punchout - L3 | Building VA (North) | L3 | Punchout | 3 | 2026-10-23 | 2026-10-26 | 2026-10-23 | 2026-10-26 | 3 | 2268.75 | 0.0 | Not Started | 2268.75 | 2722.5 | 453.75 | 9075.0 | SF |  |
| A0410 | Building VA (South) Layout - L1 | Building VA (South) | L1 | Layout | 3 | 2026-05-18 | 2026-05-21 | 2026-05-18 | 2026-05-21 | 3 | 2685.6 | 0.0 | Not Started | 2685.6 | 3491.28 | 805.68 | 8952.0 | SF |  |
| A0420 | Building VA (South) Wall Framing - L1 | Building VA (South) | L1 | Wall Framing | 10 | 2026-05-21 | 2026-05-31 | 2026-05-21 | 2026-05-31 | 10 | 11190.0 | 0.0 | Not Started | 11190.0 | 14547.0 | 3357.0 | 8952.0 | SF | Lumber, LVL |
| A0430 | Building VA (South) Sheathing - L1 | Building VA (South) | L1 | Sheathing | 6 | 2026-05-31 | 2026-06-06 | 2026-05-31 | 2026-06-06 | 6 | 2238.0 | 0.0 | Not Started | 2238.0 | 2685.6 | 447.6 | 8952.0 | SF | Panels |
| A0440 | Building VA (South) Corridor seperation Plywood Sheathing - L1 | Building VA (South) | L1 | Sheathing | 6 | 2026-06-06 | 2026-06-12 | 2026-06-06 | 2026-06-12 | 6 | 730.0 | 0.0 | Not Started | 730.0 | 876.0 | 146.0 | 73.0 | Sheets | Panels |
| A0450 | Building VA (South) Stair Plywood Sheathing - L1 | Building VA (South) | L1 | Sheathing | 6 | 2026-06-12 | 2026-06-18 | 2026-06-12 | 2026-06-18 | 6 | 250.0 | 0.0 | Not Started | 250.0 | 300.0 | 50.0 | 25.0 | Sheets | Panels |
| A0460 | Building VA (South) Zip Sheathing - L1 | Building VA (South) | L1 | Sheathing | 6 | 2026-06-18 | 2026-06-24 | 2026-06-18 | 2026-06-24 | 6 | 908.0 | 0.0 | Not Started | 908.0 | 1044.2 | 136.2 | 9080.0 | SF | Panels |
| A0470 | Building VA (South) Roof Truss - L1 | Building VA (South) | L1 | Roof Truss | 7 | 2026-06-24 | 2026-07-01 | 2026-06-24 | 2026-07-01 | 7 | 22530.0 | 0.0 | Not Started | 22530.0 | 25909.5 | 3379.5 | 11265.0 | SF | LVL |
| A0480 | Building VA (South) Hardware - L1 | Building VA (South) | L1 | Hardware | 4 | 2026-07-01 | 2026-07-05 | 2026-07-01 | 2026-07-05 | 4 | 2685.6 | 0.0 | Not Started | 2685.6 | 3088.44 | 402.84 | 8952.0 | SF | Each |
| A0490 | Building VA (South) Stair-landings - L1 | Building VA (South) | L1 | Stair-landings | 2 | 2026-07-05 | 2026-07-07 | 2026-07-05 | 2026-07-07 | 2 | 600.0 | 0.0 | Not Started | 600.0 | 750.0 | 150.0 | 1.0 | Each |  |
| A0500 | Building VA (South) Punchout - L1 | Building VA (South) | L1 | Punchout | 3 | 2026-07-07 | 2026-07-10 | 2026-07-07 | 2026-07-10 | 3 | 2238.0 | 0.0 | Not Started | 2238.0 | 2685.6 | 447.6 | 8952.0 | SF |  |
| A0510 | Building VA (South) Layout - L2 | Building VA (South) | L2 | Layout | 3 | 2026-07-10 | 2026-07-13 | 2026-07-10 | 2026-07-13 | 3 | 2724.12 | 0.0 | Not Started | 2724.12 | 3541.36 | 817.24 | 9080.4 | SF |  |
| A0520 | Building VA (South) Wall Framing - L2 | Building VA (South) | L2 | Wall Framing | 10 | 2026-07-13 | 2026-07-23 | 2026-07-13 | 2026-07-23 | 10 | 11350.5 | 0.0 | Not Started | 11350.5 | 13620.6 | 2270.1 | 9080.4 | SF | Lumber, LVL |
| A0530 | Building VA (South) Sheathing - L2 | Building VA (South) | L2 | Sheathing | 6 | 2026-07-23 | 2026-07-29 | 2026-07-23 | 2026-07-29 | 6 | 2270.1 | 0.0 | Not Started | 2270.1 | 2724.12 | 454.02 | 9080.4 | SF | Panels |
| A0540 | Building VA (South) Corridor seperation Plywood Sheathing - L2 | Building VA (South) | L2 | Sheathing | 6 | 2026-07-29 | 2026-08-04 | 2026-07-29 | 2026-08-04 | 6 | 730.0 | 0.0 | Not Started | 730.0 | 876.0 | 146.0 | 73.0 | Sheets | Panels |
| A0550 | Building VA (South) Stair Plywood Sheathing - L2 | Building VA (South) | L2 | Sheathing | 6 | 2026-08-04 | 2026-08-10 | 2026-08-04 | 2026-08-10 | 6 | 250.0 | 0.0 | Not Started | 250.0 | 300.0 | 50.0 | 25.0 | Sheets | Panels |
| A0560 | Building VA (South) Zip Sheathing - L2 | Building VA (South) | L2 | Sheathing | 6 | 2026-08-10 | 2026-08-16 | 2026-08-10 | 2026-08-16 | 6 | 908.0 | 0.0 | Not Started | 908.0 | 1044.2 | 136.2 | 9080.0 | SF | Panels |
| A0570 | Building VA (South) Unit Floor Truss - L2 | Building VA (South) | L2 | Unit Floor Truss | 5 | 2026-08-16 | 2026-08-21 | 2026-08-16 | 2026-08-21 | 5 | 9246.75 | 0.0 | Not Started | 9246.75 | 11096.1 | 1849.35 | 7397.4 | SF | LVL |
| A0580 | Building VA (South) Corridor Floor Truss - L2 | Building VA (South) | L2 | Corridor Floor Truss | 3 | 2026-08-21 | 2026-08-24 | 2026-08-21 | 2026-08-24 | 3 | 764.69 | 0.0 | Not Started | 764.69 | 879.39 | 114.7 | 611.75 | SF | LVL |
| A0590 | Building VA (South) Hardware - L2 | Building VA (South) | L2 | Hardware | 4 | 2026-08-24 | 2026-08-28 | 2026-08-24 | 2026-08-28 | 4 | 2724.12 | 0.0 | Not Started | 2724.12 | 3132.74 | 408.62 | 9080.4 | SF | Each |
| A0600 | Building VA (South) Stair-landings - L2 | Building VA (South) | L2 | Stair-landings | 2 | 2026-08-28 | 2026-08-30 | 2026-08-28 | 2026-08-30 | 2 | 600.0 | 0.0 | Not Started | 600.0 | 750.0 | 150.0 | 1.0 | Each |  |
| A0610 | Building VA (South) Punchout - L2 | Building VA (South) | L2 | Punchout | 3 | 2026-08-30 | 2026-09-02 | 2026-08-30 | 2026-09-02 | 3 | 2270.1 | 0.0 | Not Started | 2270.1 | 2724.12 | 454.02 | 9080.4 | SF |  |
| A0620 | Building VA (South) Layout - L3 | Building VA (South) | L3 | Layout | 3 | 2026-09-02 | 2026-09-05 | 2026-09-02 | 2026-09-05 | 3 | 2722.5 | 0.0 | Not Started | 2722.5 | 3539.25 | 816.75 | 9075.0 | SF |  |
| A0630 | Building VA (South) Wall Framing - L3 | Building VA (South) | L3 | Wall Framing | 10 | 2026-09-05 | 2026-09-15 | 2026-09-05 | 2026-09-15 | 10 | 11343.75 | 0.0 | Not Started | 11343.75 | 13612.5 | 2268.75 | 9075.0 | SF | Lumber, LVL |
| A0640 | Building VA (South) Sheathing - L3 | Building VA (South) | L3 | Sheathing | 6 | 2026-09-15 | 2026-09-21 | 2026-09-15 | 2026-09-21 | 6 | 2268.75 | 0.0 | Not Started | 2268.75 | 2722.5 | 453.75 | 9075.0 | SF | Panels |
| A0650 | Building VA (South) Corridor seperation Plywood Sheathing - L3 | Building VA (South) | L3 | Sheathing | 6 | 2026-09-21 | 2026-09-27 | 2026-09-21 | 2026-09-27 | 6 | 620.0 | 0.0 | Not Started | 620.0 | 744.0 | 124.0 | 62.0 | Sheets | Panels |
| A0660 | Building VA (South) Stair Plywood Sheathing - L3 | Building VA (South) | L3 | Sheathing | 6 | 2026-09-27 | 2026-10-03 | 2026-09-27 | 2026-10-03 | 6 | 220.0 | 0.0 | Not Started | 220.0 | 264.0 | 44.0 | 22.0 | Sheets | Panels |
| A0670 | Building VA (South) Zip Sheathing - L3 | Building VA (South) | L3 | Sheathing | 6 | 2026-10-03 | 2026-10-09 | 2026-10-03 | 2026-10-09 | 6 | 578.6 | 0.0 | Not Started | 578.6 | 665.39 | 86.79 | 5786.0 | SF | Panels |
| A0680 | Building VA (South) Unit Floor Truss - L3 | Building VA (South) | L3 | Unit Floor Truss | 5 | 2026-10-09 | 2026-10-14 | 2026-10-09 | 2026-10-14 | 5 | 8174.5 | 0.0 | Not Started | 8174.5 | 9400.68 | 1226.18 | 6539.6 | SF | LVL |
| A0690 | Building VA (South) Corridor Floor Truss - L3 | Building VA (South) | L3 | Corridor Floor Truss | 3 | 2026-10-14 | 2026-10-17 | 2026-10-14 | 2026-10-17 | 3 | 1058.44 | 0.0 | Not Started | 1058.44 | 1217.21 | 158.77 | 846.75 | SF | LVL |
| A0700 | Building VA (South) Hardware - L3 | Building VA (South) | L3 | Hardware | 4 | 2026-10-17 | 2026-10-21 | 2026-10-17 | 2026-10-21 | 4 | 2722.5 | 0.0 | Not Started | 2722.5 | 3130.88 | 408.38 | 9075.0 | SF | Each |

| id | name | building | level | activity_type | duration | planned_start | planned_finish | baseline_start | baseline_finish | baseline_duration | baseline_cost | pct_complete | status | builder_cost | client_price | profit | quantity | unit | material_types |
| --- | --- | --- | --- | --- | --- | --- | --- | --- | --- | --- | --- | --- | --- | --- | --- | --- | --- | --- | --- |
| A0710 | Building VA (South) Stair-landings - L3 | Building VA (South) | L3 | Stair-landings | 2 | 2026-10-21 | 2026-10-23 | 2026-10-21 | 2026-10-23 | 2 | 600.0 | 0.0 | Not Started | 600.0 | 750.0 | 150.0 | 1.0 | Each |  |
| A0720 | Building VA (South) Punchout - L3 | Building VA (South) | L3 | Punchout | 3 | 2026-10-23 | 2026-10-26 | 2026-10-23 | 2026-10-26 | 3 | 2268.75 | 0.0 | Not Started | 2268.75 | 2722.5 | 453.75 | 9075.0 | SF |  |
| A0730 | Mail Kiosk (North) Layout - L1 | Mail Kiosk (North) | L1 | Layout | 3 | 2026-05-18 | 2026-05-21 | 2026-05-18 | 2026-05-21 | 3 | 18.15 | 0.0 | Not Started | 18.15 | 23.6 | 5.45 | 60.5 | SF |  |
| A0740 | Mail Kiosk (North) Wall Framing - L1 | Mail Kiosk (North) | L1 | Wall Framing | 10 | 2026-05-21 | 2026-05-31 | 2026-05-21 | 2026-05-31 | 10 | 75.63 | 0.0 | Not Started | 75.63 | 90.76 | 15.13 | 60.5 | SF | Lumber, LVL |
| A0750 | Mail Kiosk (North) Sheathing - L1 | Mail Kiosk (North) | L1 | Sheathing | 6 | 2026-05-31 | 2026-06-06 | 2026-05-31 | 2026-06-06 | 6 | 15.13 | 0.0 | Not Started | 15.13 | 18.16 | 3.03 | 60.5 | SF | Panels |
| A0760 | Mail Kiosk (North) Roof Truss- L1 | Mail Kiosk (North) | L1 | Roof Truss | 7 | 2026-06-06 | 2026-06-13 | 2026-06-06 | 2026-06-13 | 7 | 154.0 | 0.0 | Not Started | 154.0 | 177.1 | 23.1 | 77.0 | SF | LVL |
| A0770 | Mail Kiosk (North) Hardware - L1 | Mail Kiosk (North) | L1 | Hardware | 4 | 2026-06-13 | 2026-06-17 | 2026-06-13 | 2026-06-17 | 4 | 18.15 | 0.0 | Not Started | 18.15 | 20.87 | 2.72 | 60.5 | SF | Each |
| A0780 | Mail Kiosk (North) Punchout - L1 | Mail Kiosk (North) | L1 | Punchout | 3 | 2026-06-17 | 2026-06-20 | 2026-06-17 | 2026-06-20 | 3 | 15.13 | 0.0 | Not Started | 15.13 | 18.16 | 3.03 | 60.5 | SF |  |
| A0790 | Mail Kiosk (South) Layout - L1 | Mail Kiosk (South) | L1 | Layout | 3 | 2026-05-18 | 2026-05-21 | 2026-05-18 | 2026-05-21 | 3 | 18.15 | 0.0 | Not Started | 18.15 | 23.6 | 5.45 | 60.5 | SF |  |
| A0800 | Mail Kiosk (South) Wall Framing - L1 | Mail Kiosk (South) | L1 | Wall Framing | 10 | 2026-05-21 | 2026-05-31 | 2026-05-21 | 2026-05-31 | 10 | 75.63 | 0.0 | Not Started | 75.63 | 90.76 | 15.13 | 60.5 | SF | Lumber, LVL |
| A0810 | Mail Kiosk (South) Sheathing - L1 | Mail Kiosk (South) | L1 | Sheathing | 6 | 2026-05-31 | 2026-06-06 | 2026-05-31 | 2026-06-06 | 6 | 15.13 | 0.0 | Not Started | 15.13 | 18.16 | 3.03 | 60.5 | SF | Panels |
| A0820 | Mail Kiosk (South) Roof Truss- L1 | Mail Kiosk (South) | L1 | Roof Truss | 7 | 2026-06-06 | 2026-06-13 | 2026-06-06 | 2026-06-13 | 7 | 154.0 | 0.0 | Not Started | 154.0 | 177.1 | 23.1 | 77.0 | SF | LVL |
| A0830 | Mail Kiosk (South) Hardware - L1 | Mail Kiosk (South) | L1 | Hardware | 4 | 2026-06-13 | 2026-06-17 | 2026-06-13 | 2026-06-17 | 4 | 18.15 | 0.0 | Not Started | 18.15 | 20.87 | 2.72 | 60.5 | SF | Each |
| A0840 | Mail Kiosk (South) Punchout - L1 | Mail Kiosk (South) | L1 | Punchout | 3 | 2026-06-17 | 2026-06-20 | 2026-06-17 | 2026-06-20 | 3 | 15.13 | 0.0 | Not Started | 15.13 | 18.16 | 3.03 | 60.5 | SF |  |
| A0850 | Trash Enclosure (North) Layout- L1 | Trash Enclosure (North) | L1 | Layout | 3 | 2026-05-18 | 2026-05-21 | 2026-05-18 | 2026-05-21 | 3 | 87.6 | 0.0 | Not Started | 87.6 | 113.88 | 26.28 | 292.0 | SF |  |
| A0860 | Trash Enclosure (North) Wall Framing- L1 | Trash Enclosure (North) | L1 | Wall Framing | 10 | 2026-05-21 | 2026-05-31 | 2026-05-21 | 2026-05-31 | 10 | 365.0 | 0.0 | Not Started | 365.0 | 438.0 | 73.0 | 292.0 | SF | Lumber, LVL |
| A0870 | Trash Enclosure (North) Sheathing- L1 | Trash Enclosure (North) | L1 | Sheathing | 6 | 2026-05-31 | 2026-06-06 | 2026-05-31 | 2026-06-06 | 6 | 73.0 | 0.0 | Not Started | 73.0 | 87.6 | 14.6 | 292.0 | SF | Panels |
| A0880 | Trash Enclosure (North) Hardware- L1 | Trash Enclosure (North) | L1 | Hardware | 4 | 2026-06-06 | 2026-06-10 | 2026-06-06 | 2026-06-10 | 4 | 87.6 | 0.0 | Not Started | 87.6 | 100.74 | 13.14 | 292.0 | SF | Each |
| A0890 | Trash Enclosure (North) Punchout- L1 | Trash Enclosure (North) | L1 | Punchout | 3 | 2026-06-10 | 2026-06-13 | 2026-06-10 | 2026-06-13 | 3 | 73.0 | 0.0 | Not Started | 73.0 | 87.6 | 14.6 | 292.0 | SF |  |
| A0900 | Trash Enclosure (South) Layout- L1 | Trash Enclosure (South) | L1 | Layout | 3 | 2026-05-18 | 2026-05-21 | 2026-05-18 | 2026-05-21 | 3 | 87.6 | 0.0 | Not Started | 87.6 | 113.88 | 26.28 | 292.0 | SF |  |
| A0910 | Trash Enclosure (South) Wall Framing- L1 | Trash Enclosure (South) | L1 | Wall Framing | 10 | 2026-05-21 | 2026-05-31 | 2026-05-21 | 2026-05-31 | 10 | 365.0 | 0.0 | Not Started | 365.0 | 438.0 | 73.0 | 292.0 | SF | Lumber, LVL |
| A0920 | Trash Enclosure (South) Sheathing- L1 | Trash Enclosure (South) | L1 | Sheathing | 6 | 2026-05-31 | 2026-06-06 | 2026-05-31 | 2026-06-06 | 6 | 73.0 | 0.0 | Not Started | 73.0 | 87.6 | 14.6 | 292.0 | SF | Panels |
| A0930 | Trash Enclosure (South) Hardware- L1 | Trash Enclosure (South) | L1 | Hardware | 4 | 2026-06-06 | 2026-06-10 | 2026-06-06 | 2026-06-10 | 4 | 87.6 | 0.0 | Not Started | 87.6 | 100.74 | 13.14 | 292.0 | SF | Each |
| A0940 | Trash Enclosure (South) Punchout- L1 | Trash Enclosure (South) | L1 | Punchout | 3 | 2026-06-10 | 2026-06-13 | 2026-06-10 | 2026-06-13 | 3 | 73.0 | 0.0 | Not Started | 73.0 | 87.75 | 14.75 | 292.0 | SF |  |
| A0950 | Nails Framing | All Buildings |  | Nails Framing | 5 | 2026-05-18 | 2026-05-23 | 2026-05-18 | 2026-05-23 | 5 | 38829.7 | 0.0 | Not Started | 38829.7 | 82707.26 | 43877.56 | 59738.0 | SF |  |
