| id | p6_code | name | wbs | bldg_seq | seq_no | start | finish | baseline_start | baseline_finish | actual_start | actual_finish | duration | pct_complete | status | cost_code | builder_cost | client_price | source | total_float | planned_start | planned_finish | critical |
| --- | --- | --- | --- | --- | --- | --- | --- | --- | --- | --- | --- | --- | --- | --- | --- | --- | --- | --- | --- | --- | --- | --- |
| A0001 | A0001 | Building VA (North) - Layout - Labor | Building VA (North) | 1 | 1 | 2026-06-03 | 2026-06-09 | 2026-06-03 | 2026-06-09 | 2026-06-03 | 2026-06-07 | 6 | 100 | Complete | 101 - Layout - Labor | 8132.22 | 10571.89 | bt_estimate | 20 | 2026-06-03 | 2026-06-09 |  |
| A0002 | A0002 | Building VA (North) - Framing - Labor | Building VA (North) | 1 | 2 | 2026-06-10 | 2026-06-12 | 2026-06-09 | 2026-07-06 | 2026-06-10 | 2026-06-07 | 3 | 100 | Complete | 102 - Framing - Labor | 33884.25 | 41780.1 | bt_estimate | 20 | 2026-06-10 | 2026-06-12 |  |
| A0003 | A0003 | Building VA (North) - Sheathing - Labor | Building VA (North) | 1 | 3 | 2026-06-13 | 2026-06-17 | 2026-07-06 | 2026-07-11 | 2026-06-16 | 2026-06-07 | 4 | 100 | Complete | 103 - Sheathing - Labor | 7506.85 | 9008.22 | bt_estimate | 20 | 2026-06-13 | 2026-06-17 |  |
| A0004 | A0004 | Building VA (North) - Shear Wall - Labor | Building VA (North) | 1 | 4 | 2026-06-18 | 2026-06-20 | 2026-07-11 | 2026-07-13 |  |  | 3 | 0 | Not Started | 104 - Shear Wall - Labor | 2070 | 2484 | bt_estimate | 20 | 2026-06-18 | 2026-06-20 |  |
| A0005 | A0005 | Building VA (North) - Floor Truss - Labor | Building VA (North) | 1 | 5 | 2026-06-22 | 2026-06-29 | 2026-07-13 | 2026-07-28 | 2026-06-23 | 2026-06-07 | 7 | 100 | Complete | 106 - Floor Truss - Labor | 19244.38 | 22593.38 | bt_estimate | 20 | 2026-06-22 | 2026-06-29 |  |
| A0006 | A0006 | Building VA (North) - Roof Truss - Labor | Building VA (North) | 1 | 6 | 2026-06-30 | 2026-07-07 | 2026-07-28 | 2026-08-14 | 2026-07-08 | 2026-06-07 | 7 | 100 | Complete | 107 - Roof Truss - Labor | 22530.0 | 25909.5 | bt_estimate | 20 | 2026-06-30 | 2026-07-07 |  |
| A0007 | A0007 | Building VA (North) - Hardware - Labor | Building VA (North) | 1 | 7 | 2026-07-25 | 2026-07-30 | 2026-08-14 | 2026-08-20 | 2026-07-25 | 2026-06-07 | 5 | 100.0 | Complete | 109 - Hardware - Labor | 8132.22 | 9352.06 | bt_estimate | 20 | 2026-07-25 | 2026-07-30 |  |
| A0008 | A0008 | Building VA (North) - House Wrap - Labor | Building VA (North) | 1 | 8 | 2026-07-31 | 2026-08-01 | 2026-08-20 | 2026-08-22 | 2026-07-31 | 2026-06-07 | 2 | 100.0 | Complete | 110 - House Wrap - Labor | 2697.9 | 3102.59 | bt_estimate | 20 | 2026-07-31 | 2026-08-01 |  |
| A0009 | A0009 | Building VA (North) - Stair Labor | Building VA (North) | 1 | 9 | 2026-08-03 | 2026-08-03 | 2026-08-22 | 2026-08-24 | 2026-08-03 | 2026-06-07 | 1 | 100.0 | Complete | 113 - Stair Labor | 1800.0 | 2250.0 | bt_estimate | 20 | 2026-08-03 | 2026-08-03 |  |
| A0010 | A0010 | Building VA (North) - Punchout - Labor | Building VA (North) | 1 | 10 | 2026-08-04 | 2026-08-08 | 2026-08-24 | 2026-08-29 | 2026-08-04 |  | 5 | 39.68 | In Progress | 115 - Punchout - Labor | 6776.85 | 8132.22 | bt_estimate | 20 | 2026-08-04 | 2026-08-08 |  |
| A0011 | A0011 | Building VA (South) - Layout - Labor | Building VA (South) | 2 | 1 | 2026-06-03 | 2026-06-09 | 2026-06-03 | 2026-06-09 | 2026-06-03 | 2026-06-07 | 5 | 100.0 | Complete | 101 - Layout - Labor | 8132.22 | 10571.89 | bt_estimate | 1 | 2026-06-03 | 2026-06-09 | True |
| A0012 | A0012 | Building VA (South) - Framing - Labor | Building VA (South) | 2 | 2 | 2026-06-10 | 2026-06-16 | 2026-06-09 | 2026-07-06 | 2026-06-10 | 2026-06-07 | 6 | 100 | Complete | 102 - Framing - Labor | 33884.25 | 41780.1 | bt_estimate | 1 | 2026-06-10 | 2026-06-16 | True |
| A0013 | A0013 | Building VA (South) - Sheathing - Labor | Building VA (South) | 2 | 3 | 2026-06-18 | 2026-06-19 | 2026-07-06 | 2026-07-11 | 2026-07-07 | 2026-06-07 | 2 | 100 | Complete | 103 - Sheathing - Labor | 6776.85 | 8132.22 | bt_estimate | 1 | 2026-06-18 | 2026-06-19 | True |
| A0014 | A0014 | Building VA (South) - Shear Wall - Labor | Building VA (South) | 2 | 4 | 2026-06-20 | 2026-06-25 | 2026-07-11 | 2026-07-14 |  |  | 5 | 0 | Not Started | 104 - Shear Wall - Labor | 2800.0 | 3360.0 | bt_estimate | 1 | 2026-06-20 | 2026-06-25 | True |
| A0015 | A0015 | Building VA (South) - Floor Truss - Labor | Building VA (South) | 2 | 5 | 2026-07-01 | 2026-07-15 | 2026-07-14 | 2026-07-29 | 2026-07-15 | 2026-06-07 | 13 | 100 | Complete | 106 - Floor Truss - Labor | 19244.38 | 22593.38 | bt_estimate | 1 | 2026-07-01 | 2026-07-15 | True |
| A0016 | A0016 | Building VA (South) - Roof Truss - Labor | Building VA (South) | 2 | 6 | 2026-07-16 | 2026-08-01 | 2026-07-29 | 2026-08-15 | 2026-07-30 | 2026-06-07 | 15 | 100 | Complete | 107 - Roof Truss - Labor | 22530.0 | 25909.5 | bt_estimate | 1 | 2026-07-16 | 2026-08-01 | True |
| A0017 | A0017 | Building VA (South) - Hardware - Labor | Building VA (South) | 2 | 7 | 2026-08-17 | 2026-08-21 | 2026-08-15 | 2026-08-21 | 2026-08-17 | 2026-06-07 | 5 | 100.0 | Complete | 109 - Hardware - Labor | 8132.22 | 9352.06 | bt_estimate | 1 | 2026-08-17 | 2026-08-21 | True |
| A0018 | A0018 | Building VA (South) - House Wrap - Labor | Building VA (South) | 2 | 8 | 2026-08-22 | 2026-08-24 | 2026-08-21 | 2026-08-24 | 2026-08-22 | 2026-06-07 | 2 | 100.0 | Complete | 110 - House Wrap - Labor | 2394.6 | 2753.79 | bt_estimate | 1 | 2026-08-22 | 2026-08-24 | True |
| A0019 | A0019 | Building VA (South) - Stair Labor | Building VA (South) | 2 | 9 | 2026-08-25 | 2026-08-25 | 2026-08-24 | 2026-08-25 | 2026-08-25 | 2026-06-07 | 1 | 100.0 | Complete | 113 - Stair Labor | 1800.0 | 2250.0 | bt_estimate | 1 | 2026-08-25 | 2026-08-25 | True |
| A0020 | A0020 | Building VA (South) - Punchout - Labor | Building VA (South) | 2 | 10 | 2026-08-26 | 2026-08-31 | 2026-08-25 | 2026-08-31 | 2026-08-26 | 2026-06-07 | 5 | 100.0 | Complete | 115 - Punchout - Labor | 6776.85 | 8132.22 | bt_estimate | 1 | 2026-08-26 | 2026-08-31 | True |
| A0021 | A0021 | Club house VB (North) - Layout - Labor | Club house VB (North) | 3 | 1 | 2026-06-03 | 2026-06-04 | 2026-06-03 | 2026-06-04 | 2026-06-03 | 2026-06-07 | 1 | 100.0 | Complete | 101 - Layout - Labor | 1445.46 | 1879.1 | bt_estimate | 59 | 2026-06-03 | 2026-06-04 |  |
| A0022 | A0022 | Club house VB (North) - Framing - Labor | Club house VB (North) | 3 | 2 | 2026-06-05 | 2026-06-09 | 2026-06-04 | 2026-06-09 | 2026-06-05 | 2026-06-07 | 4 | 100.0 | Complete | 102 - Framing - Labor | 6022.75 | 7829.58 | bt_estimate | 59 | 2026-06-05 | 2026-06-09 |  |
| A0023 | A0023 | Club house VB (North) - Sheathing - Labor | Club house VB (North) | 3 | 3 | 2026-06-12 | 2026-06-12 | 2026-06-09 | 2026-06-10 | 2026-06-10 | 2026-06-07 | 1 | 100 | Complete | 103 - Sheathing - Labor | 1204.55 | 1445.46 | bt_estimate | 59 | 2026-06-12 | 2026-06-12 |  |
| A0024 | A0024 | Club house VB (North) - Shear Wall - Labor | Club house VB (North) | 3 | 4 | 2026-06-13 | 2026-06-13 | 2026-06-10 | 2026-06-11 |  |  | 1 | 0 | Not Started | 104 - Shear Wall - Labor | 230.0 | 276.0 | bt_estimate | 59 | 2026-06-13 | 2026-06-13 |  |
| A0025 | A0025 | Club house VB (North) - Roof Truss - Labor | Club house VB (North) | 3 | 5 | 2026-06-15 | 2026-06-23 | 2026-06-11 | 2026-06-20 | 2026-06-12 | 2026-06-07 | 8 | 100 | Complete | 107 - Roof Truss - Labor | 12342.0 | 14193.3 | bt_estimate | 59 | 2026-06-15 | 2026-06-23 |  |
| A0026 | A0026 | Club house VB (North) - Hardware - Labor | Club house VB (North) | 3 | 6 | 2026-06-22 | 2026-06-22 | 2026-06-20 | 2026-06-22 | 2026-06-22 | 2026-06-07 | 1 | 100.0 | Complete | 109 - Hardware - Labor | 1445.46 | 1662.28 | bt_estimate | 59 | 2026-06-22 | 2026-06-22 |  |
| A0027 | A0027 | Club house VB (North) - House Wrap - Labor | Club house VB (North) | 3 | 7 | 2026-06-23 | 2026-06-23 | 2026-06-22 | 2026-06-23 |  |  | 1 | 0 | Not Started | 110 - House Wrap - Labor | 907.5 | 1043.63 | bt_estimate | 59 | 2026-06-23 | 2026-06-23 |  |
| A0028 | A0028 | Club house VB (North) - Punchout - Labor | Club house VB (North) | 3 | 8 | 2026-06-24 | 2026-06-24 | 2026-06-23 | 2026-06-24 | 2026-06-24 | 2026-06-07 | 1 | 100.0 | Complete | 115 - Punchout - Labor | 1204.55 | 1445.46 | bt_estimate | 59 | 2026-06-24 | 2026-06-24 |  |
| A0029 | A0029 | Mail Kiosk (North) - Layout - Labor | Mail Kiosk (North) | 4 | 1 | 2026-06-03 | 2026-06-04 | 2026-06-03 | 2026-06-04 | 2026-06-03 | 2026-06-07 | 1 | 100.0 | Complete | 101 - Layout - Labor | 18.15 | 23.6 | bt_estimate | 71 | 2026-06-03 | 2026-06-04 |  |
| A0030 | A0030 | Mail Kiosk (North) - Framing - Labor | Mail Kiosk (North) | 4 | 2 | 2026-06-05 | 2026-06-05 | 2026-06-04 | 2026-06-05 | 2026-06-05 | 2026-06-07 | 1 | 100.0 | Complete | 102 - Framing - Labor | 75.63 | 90.76 | bt_estimate | 71 | 2026-06-05 | 2026-06-05 |  |
| A0031 | A0031 | Mail Kiosk (North) - Sheathing - Labor | Mail Kiosk (North) | 4 | 3 | 2026-06-06 | 2026-06-06 | 2026-06-05 | 2026-06-06 | 2026-06-06 | 2026-06-07 | 1 | 100.0 | Complete | 103 - Sheathing - Labor | 15.13 | 18.16 | bt_estimate | 71 | 2026-06-06 | 2026-06-06 |  |
| A0032 | A0032 | Mail Kiosk (North) - Roof Truss - Labor | Mail Kiosk (North) | 4 | 4 | 2026-06-08 | 2026-06-08 | 2026-06-06 | 2026-06-08 | 2026-06-08 | 2026-06-07 | 1 | 100.0 | Complete | 107 - Roof Truss - Labor | 154.0 | 177.1 | bt_estimate | 71 | 2026-06-08 | 2026-06-08 |  |
| A0033 | A0033 | Mail Kiosk (North) - Hardware - Labor | Mail Kiosk (North) | 4 | 5 | 2026-06-10 | 2026-06-10 | 2026-06-08 | 2026-06-09 | 2026-06-09 | 2026-06-07 | 1 | 100 | Complete | 109 - Hardware - Labor | 18.15 | 20.87 | bt_estimate | 71 | 2026-06-10 | 2026-06-10 |  |
| A0034 | A0034 | Mail Kiosk (North) - Punchout - Labor | Mail Kiosk (North) | 4 | 6 | 2026-06-11 | 2026-06-11 | 2026-06-09 | 2026-06-10 |  |  | 1 | 0 | Not Started | 115 - Punchout - Labor | 15.13 | 18.16 | bt_estimate | 71 | 2026-06-11 | 2026-06-11 |  |
| A0035 | A0035 | Mail Kiosk (South) - Layout - Labor | Mail Kiosk (South) | 5 | 1 | 2026-06-03 | 2026-06-04 | 2026-06-03 | 2026-06-04 | 2026-06-03 | 2026-06-07 | 1 | 100.0 | Complete | 101 - Layout - Labor | 18.15 | 23.6 | bt_estimate | 71 | 2026-06-03 | 2026-06-04 |  |
| A0036 | A0036 | Mail Kiosk (South) - Framing - Labor | Mail Kiosk (South) | 5 | 2 | 2026-06-05 | 2026-06-05 | 2026-06-04 | 2026-06-05 | 2026-06-05 | 2026-06-07 | 1 | 100.0 | Complete | 102 - Framing - Labor | 75.63 | 90.76 | bt_estimate | 71 | 2026-06-05 | 2026-06-05 |  |
| A0037 | A0037 | Mail Kiosk (South) - Sheathing - Labor | Mail Kiosk (South) | 5 | 3 | 2026-06-06 | 2026-06-06 | 2026-06-05 | 2026-06-06 | 2026-06-06 | 2026-06-07 | 1 | 100.0 | Complete | 103 - Sheathing - Labor | 15.13 | 18.16 | bt_estimate | 71 | 2026-06-06 | 2026-06-06 |  |
| A0038 | A0038 | Mail Kiosk (South) - Roof Truss - Labor | Mail Kiosk (South) | 5 | 4 | 2026-06-08 | 2026-06-08 | 2026-06-06 | 2026-06-08 | 2026-06-08 | 2026-06-07 | 1 | 100.0 | Complete | 107 - Roof Truss - Labor | 154.0 | 177.1 | bt_estimate | 71 | 2026-06-08 | 2026-06-08 |  |
| A0039 | A0039 | Mail Kiosk (South) - Hardware - Labor | Mail Kiosk (South) | 5 | 5 | 2026-06-09 | 2026-06-09 | 2026-06-08 | 2026-06-09 | 2026-06-09 | 2026-06-07 | 1 | 100.0 | Complete | 109 - Hardware - Labor | 18.15 | 20.87 | bt_estimate | 71 | 2026-06-09 | 2026-06-09 |  |
| A0040 | A0040 | Mail Kiosk (South) - Punchout - Labor | Mail Kiosk (South) | 5 | 6 | 2026-06-10 | 2026-06-10 | 2026-06-09 | 2026-06-10 |  |  | 1 | 0 | Not Started | 115 - Punchout - Labor | 15.13 | 18.16 | bt_estimate | 71 | 2026-06-10 | 2026-06-10 |  |
| A0041 | A0041 | Trash Enclosure (North) - Layout - Labor | Trash Enclosure (North) | 6 | 1 | 2026-06-03 | 2026-06-04 | 2026-06-03 | 2026-06-04 |  |  | 1 | 0 | Not Started | 101 - Layout - Labor | 87.6 | 113.88 | bt_estimate | 72 | 2026-06-03 | 2026-06-04 |  |
| A0042 | A0042 | Trash Enclosure (North) - Framing - Labor | Trash Enclosure (North) | 6 | 2 | 2026-06-05 | 2026-06-05 | 2026-06-04 | 2026-06-05 | 2026-06-05 |  | 1 | 69.0 | In Progress | 102 - Framing - Labor | 365.0 | 438.0 | bt_estimate | 72 | 2026-06-05 | 2026-06-05 |  |
| A0043 | A0043 | Trash Enclosure (North) - Sheathing - Labor | Trash Enclosure (North) | 6 | 3 | 2026-06-06 | 2026-06-06 | 2026-06-05 | 2026-06-06 |  |  | 1 | 0 | Not Started | 103 - Sheathing - Labor | 73.0 | 87.6 | bt_estimate | 72 | 2026-06-06 | 2026-06-06 |  |
| A0044 | A0044 | Trash Enclosure (North) - Hardware - Labor | Trash Enclosure (North) | 6 | 4 | 2026-06-08 | 2026-06-08 | 2026-06-06 | 2026-06-08 |  |  | 1 | 0 | Not Started | 109 - Hardware - Labor | 87.6 | 100.74 | bt_estimate | 72 | 2026-06-08 | 2026-06-08 |  |
| A0045 | A0045 | Trash Enclosure (North) - Punchout - Labor | Trash Enclosure (North) | 6 | 5 | 2026-06-09 | 2026-06-09 | 2026-06-08 | 2026-06-09 |  |  | 1 | 0 | Not Started | 115 - Punchout - Labor | 73.0 | 87.6 | bt_estimate | 72 | 2026-06-09 | 2026-06-09 |  |
| A0046 | A0046 | Trash Enclosure (South) - Layout - Labor | Trash Enclosure (South) | 7 | 1 | 2026-06-10 | 2026-06-11 | 2026-06-03 | 2026-06-04 |  |  | 2 | 0 | Not Started | 101 - Layout - Labor | 87.6 | 113.88 | bt_estimate | 72 | 2026-06-10 | 2026-06-11 |  |
| A0047 | A0047 | Trash Enclosure (South) - Framing - Labor | Trash Enclosure (South) | 7 | 2 | 2026-06-12 | 2026-06-12 | 2026-06-04 | 2026-06-05 | 2026-06-05 |  | 1 | 69.0 | In Progress | 102 - Framing - Labor | 365.0 | 438.0 | bt_estimate | 72 | 2026-06-12 | 2026-06-12 |  |
| A0048 | A0048 | Trash Enclosure (South) - Sheathing - Labor | Trash Enclosure (South) | 7 | 3 | 2026-06-14 | 2026-06-14 | 2026-06-05 | 2026-06-06 |  |  | 1 | 0 | Not Started | 103 - Sheathing - Labor | 73 | 87.6 | bt_estimate | 72 | 2026-06-14 | 2026-06-14 |  |
| A0049 | A0049 | Trash Enclosure (South) - Hardware - Labor | Trash Enclosure (South) | 7 | 4 | 2026-06-14 | 2026-06-14 | 2026-06-06 | 2026-06-08 |  |  | 1 | 0 | Not Started | 109 - Hardware - Labor | 87.6 | 100.74 | bt_estimate | 72 | 2026-06-14 | 2026-06-14 |  |
| A0050 | A0050 | Trash Enclosure (South) - Punchout - Labor | Trash Enclosure (South) | 7 | 5 | 2026-06-14 | 2026-06-14 | 2026-06-08 | 2026-06-09 |  |  | 1 | 0 | Not Started | 115 - Punchout - Labor | 73.0 | 87.75 | bt_estimate | 72 | 2026-06-14 | 2026-06-14 |  |

Links (id, pred_id, succ_id, type, lag_days):
- 1 A0001 A0002 FS 0
- 2 A0002 A0003 FS 0
- 5 A0005 A0006 FS 0
- 6 A0006 A0007 FS 0
- 7 A0007 A0008 FS 0
- 8 A0008 A0009 FS 0
- 9 A0009 A0010 FS 0
- 10 A0011 A0012 FS 0
- 11 A0012 A0013 FS 0
- 12 A0013 A0014 FS 0
- 13 A0014 A0015 FS 0
- 14 A0015 A0016 FS 0
- 15 A0016 A0017 FS 0
- 16 A0017 A0018 FS 0
- 17 A0018 A0019 FS 0
- 18 A0019 A0020 FS 0
- 19 A0021 A0022 FS 0
- 20 A0022 A0023 FS 0
- 21 A0023 A0024 FS 0
- 22 A0024 A0025 FS 0
- 23 A0025 A0026 FS 0
- 24 A0026 A0027 FS 0
- 25 A0027 A0028 FS 0
- 26 A0029 A0030 FS 0
- 27 A0030 A0031 FS 0
- 28 A0031 A0032 FS 0
- 29 A0032 A0033 FS 0
- 30 A0033 A0034 FS 0
- 31 A0035 A0036 FS 0
- 32 A0036 A0037 FS 0
- 33 A0037 A0038 FS 0
- 34 A0038 A0039 FS 0
- 35 A0039 A0040 FS 0
- 36 A0041 A0042 FS 0
- 37 A0042 A0043 FS 0
- 38 A0043 A0044 FS 0
- 39 A0044 A0045 FS 0
- 40 A0046 A0047 FS 0
- 41 A0047 A0048 FS 0
- 43 A0049 A0050 FF 0
- 44 A0004 A0005 FS 0
- 45 A0003 A0004 FS 0
- 46 A0045 A0046 FS 0
- 47 A0048 A0049 FF 0
