# denton

Schedule from Primavera P6, 2026-06-13 to 2026-12-08, data date 2026-06-13.

## Calendars

- MatInv 6-day: Mon-Sat 08:00-12:00, 13:00-17:00; Sun off.

## Schedule

| ID | WBS | Activity | Duration | Start | Finish | Predecessors | Total float |
| --- | --- | --- | --- | --- | --- | --- | --- |
|  | 01Framin | **01 - Framing** |  | 2026-06-13 | 2026-12-08 |  |  |
| A0001 |  | Building 1 - Level 1 - Layout | 3d | 2026-06-13 | 2026-06-16 |  | 0d |
| A0002 |  | Building 1 - Level 1 - Wall Framing | 3d | 2026-06-17 | 2026-06-19 | A0001 | 0d |
| A0003 |  | Building 1 - Level 1 - Sheathing - Stair Wall - Plywood | 3d | 2026-06-20 | 2026-06-23 | A0002 | 0d |
| A0004 |  | Building 1 - Level 1 - Hardware | 3d | 2026-06-24 | 2026-06-26 | A0003 | 0d |
| A0005 |  | Building 1 - Level 1 - Sheathing - Exterior | 3d | 2026-06-27 | 2026-06-30 | A0004 | 0d |
| A0006 |  | Building 1 - Level 1 - Sheathing - Corridor - Plywood | 3d | 2026-07-01 | 2026-07-03 | A0005 | 0d |
| A0007 |  | Building 1 - Level 1 - Sheathing - Demising - Plywood | 3d | 2026-07-04 | 2026-07-07 | A0006 | 0d |
| A0008 |  | Building 1 - Level 1 - Punchout | 3d | 2026-07-08 | 2026-07-10 | A0007 | 0d |
| A0009 |  | Building 1 - Level 2 - Layout | 3d | 2026-07-11 | 2026-07-14 | A0008 | 0d |
| A0010 |  | Building 1 - Level 2 - Wall Framing | 3d | 2026-07-15 | 2026-07-17 | A0009 | 0d |
| A0011 |  | Building 1 - Level 2 - Floor Truss - Unit - Prefabricated | 3d | 2026-07-18 | 2026-07-21 | A0010 | 0d |
| A0012 |  | Building 1 - Level 2 - Floor Truss - Corridor - Prefabricated | 3d | 2026-07-22 | 2026-07-24 | A0011 | 0d |
| A0013 |  | Building 1 - Level 2 - Sheathing - Stair Wall - Plywood | 3d | 2026-07-25 | 2026-07-28 | A0012 | 0d |
| A0014 |  | Building 1 - Level 2 - Hardware | 3d | 2026-07-29 | 2026-07-31 | A0013 | 0d |
| A0015 |  | Building 1 - Level 2 - Sheathing - Exterior | 3d | 2026-08-01 | 2026-08-04 | A0014 | 0d |
| A0016 |  | Building 1 - Level 2 - Sheathing - Corridor - Plywood | 3d | 2026-08-05 | 2026-08-07 | A0015 | 0d |
| A0017 |  | Building 1 - Level 2 - Sheathing - Demising - Plywood | 3d | 2026-08-08 | 2026-08-11 | A0016 | 0d |
| A0018 |  | Building 1 - Level 2 - Punchout | 3d | 2026-08-12 | 2026-08-14 | A0017 | 0d |
| A0019 |  | Building 1 - Level 2 - Balcony - Framing | 3d | 2026-08-15 | 2026-08-18 | A0018 | 0d |
| A0020 |  | Building 1 - Level 3 - Layout | 3d | 2026-08-19 | 2026-08-21 | A0019 | 0d |
| A0021 |  | Building 1 - Level 3 - Wall Framing | 3d | 2026-08-22 | 2026-08-25 | A0020 | 0d |
| A0022 |  | Building 1 - Level 3 - Floor Truss - Unit - Prefabricated | 3d | 2026-08-26 | 2026-08-28 | A0021 | 0d |
| A0023 |  | Building 1 - Level 3 - Floor Truss - Corridor - Prefabricated | 3d | 2026-08-29 | 2026-09-01 | A0022 | 0d |
| A0024 |  | Building 1 - Level 3 - Sheathing - Stair Wall - Plywood | 3d | 2026-09-02 | 2026-09-04 | A0023 | 0d |
| A0025 |  | Building 1 - Level 3 - Hardware | 3d | 2026-09-05 | 2026-09-08 | A0024 | 0d |
| A0026 |  | Building 1 - Level 3 - Sheathing - Exterior | 3d | 2026-09-09 | 2026-09-11 | A0025 | 0d |
| A0027 |  | Building 1 - Level 3 - Sheathing - Corridor - Plywood | 3d | 2026-09-12 | 2026-09-15 | A0026 | 0d |
| A0028 |  | Building 1 - Level 3 - Sheathing - Demising - Plywood | 3d | 2026-09-16 | 2026-09-18 | A0027 | 0d |
| A0029 |  | Building 1 - Level 3 - Punchout | 3d | 2026-09-19 | 2026-09-22 | A0028 | 0d |
| A0030 |  | Building 1 - Level 3 - Balcony - Framing | 3d | 2026-09-23 | 2026-09-25 | A0029 | 0d |
| A0031 |  | Building 1 - Level 4 - Layout | 3d | 2026-09-26 | 2026-09-29 | A0030 | 0d |
| A0032 |  | Building 1 - Level 4 - Wall Framing | 3d | 2026-09-30 | 2026-10-02 | A0031 | 0d |
| A0033 |  | Building 1 - Level 4 - Floor Truss - Unit - Prefabricated | 3d | 2026-10-03 | 2026-10-06 | A0032 | 0d |
| A0034 |  | Building 1 - Level 4 - Floor Truss - Corridor - Prefabricated | 3d | 2026-10-07 | 2026-10-09 | A0033 | 0d |
| A0035 |  | Building 1 - Level 4 - Sheathing - Stair Wall - Plywood | 3d | 2026-10-10 | 2026-10-13 | A0034 | 0d |
| A0036 |  | Building 1 - Roof Truss | 3d | 2026-10-14 | 2026-10-16 | A0035 | 0d |
| A0037 |  | Building 1 - Level 4 - Hardware | 3d | 2026-10-17 | 2026-10-20 | A0036 | 0d |
| A0038 |  | Building 1 - Level 4 - Sheathing - Exterior | 3d | 2026-10-21 | 2026-10-23 | A0037 | 0d |
| A0039 |  | Building 1 - Level 4 - Sheathing - Demising - Plywood | 3d | 2026-10-24 | 2026-10-27 | A0038 | 0d |
| A0040 |  | Building 1 - Level 4 - Punchout | 3d | 2026-10-28 | 2026-10-30 | A0039 | 0d |
| A0041 |  | Building 1 - Level 4 - Balcony - Framing | 3d | 2026-10-31 | 2026-11-03 | A0040 | 0d |
| A0042 |  | Building 1 - Level 5 - Layout | 3d | 2026-11-04 | 2026-11-06 | A0041 | 0d |
| A0043 |  | Building 1 - Level 5 - Wall Framing | 3d | 2026-11-07 | 2026-11-10 | A0042 | 0d |
| A0044 |  | Building 1 - Level 5 - Floor Truss - Unit - Prefabricated | 3d | 2026-11-11 | 2026-11-13 | A0043 | 0d |
| A0045 |  | Building 1 - Level 5 - Floor Truss - Corridor - Prefabricated | 3d | 2026-11-14 | 2026-11-17 | A0044 | 0d |
| A0046 |  | Building 1 - Level 5 - Sheathing - Stair Wall - Plywood | 3d | 2026-11-18 | 2026-11-20 | A0045 | 0d |
| A0047 |  | Building 1 - Level 5 - Hardware | 3d | 2026-11-21 | 2026-11-24 | A0046 | 0d |
| A0048 |  | Building 1 - Level 5 - Sheathing - Exterior | 3d | 2026-11-25 | 2026-11-27 | A0047 | 0d |
| A0049 |  | Building 1 - Level 5 - Sheathing - Demising - Plywood | 3d | 2026-11-28 | 2026-12-01 | A0048 | 0d |
| A0050 |  | Building 1 - Level 5 - Punchout | 3d | 2026-12-02 | 2026-12-04 | A0049 | 0d |
| A0051 |  | Building 1 - Level 5 - Balcony - Framing | 3d | 2026-12-05 | 2026-12-08 | A0050 | 0d |
