# denton

Schedule from Primavera P6, 2026-06-09 to 2027-03-03, data date 2026-06-09.

## Calendars

- MatInv 6-day: Mon-Sat 08:00-12:00, 13:00-17:00; Sun off.

## Schedule

| ID | WBS | Activity | Duration | Start | Finish | Predecessors | Total float |
| --- | --- | --- | --- | --- | --- | --- | --- |
|  | 01Framin | **01 - Framing** |  | 2026-06-09 | 2027-03-03 |  |  |
| A0010 |  | Building 1 - Level 1 - Layout | 3d | 2026-06-09 | 2026-06-12 |  | 0d |
| A0020 |  | Building 1 - Level 1 - Wall Framing | 10d | 2026-06-12 | 2026-06-22 | A0010 | 0d |
| A0030 |  | Building 1 - Level 1 - Sheathing - Stair Wall - Plywood | 6d | 2026-06-22 | 2026-06-28 | A0020 | 0d |
| A0040 |  | Building 1 - Level 1 - Sheathing - Exterior | 6d | 2026-06-28 | 2026-07-04 | A0030 | 0d |
| A0050 |  | Building 1 - Level 1 - Sheathing - Corridor - Plywood | 6d | 2026-07-04 | 2026-07-10 | A0040 | 0d |
| A0060 |  | Building 1 - Level 1 - Sheathing - Demising - Plywood | 6d | 2026-07-10 | 2026-07-16 | A0050 | 0d |
| A0070 |  | Building 1 - Level 1 - Hardware | 4d | 2026-07-16 | 2026-07-20 | A0060 | 0d |
| A0080 |  | Building 1 - Level 1 - Punchout | 3d | 2026-07-20 | 2026-07-23 | A0070 | 0d |
| A0090 |  | Building 1 - Level 2 - Floor Truss - Unit - Prefabricated | 5d | 2026-07-23 | 2026-07-28 | A0080 | 0d |
| A0100 |  | Building 1 - Level 2 - Floor Truss - Corridor - Prefabricated | 5d | 2026-07-28 | 2026-08-02 | A0090 | 0d |
| A0110 |  | Building 1 - Level 2 - Layout | 3d | 2026-08-02 | 2026-08-05 | A0100 | 0d |
| A0120 |  | Building 1 - Level 2 - Wall Framing | 10d | 2026-08-05 | 2026-08-15 | A0110 | 0d |
| A0130 |  | Building 1 - Level 2 - Balcony - Framing | 3d | 2026-08-15 | 2026-08-18 | A0120 | 0d |
| A0140 |  | Building 1 - Level 2 - Sheathing - Stair Wall - Plywood | 6d | 2026-08-18 | 2026-08-24 | A0130 | 0d |
| A0150 |  | Building 1 - Level 2 - Sheathing - Exterior | 6d | 2026-08-24 | 2026-08-30 | A0140 | 0d |
| A0160 |  | Building 1 - Level 2 - Sheathing - Corridor - Plywood | 6d | 2026-08-30 | 2026-09-05 | A0150 | 0d |
| A0170 |  | Building 1 - Level 2 - Sheathing - Demising - Plywood | 6d | 2026-09-05 | 2026-09-11 | A0160 | 0d |
| A0180 |  | Building 1 - Level 2 - Hardware | 4d | 2026-09-11 | 2026-09-15 | A0170 | 0d |
| A0190 |  | Building 1 - Level 2 - Punchout | 3d | 2026-09-15 | 2026-09-18 | A0180 | 0d |
| A0200 |  | Building 1 - Level 3 - Floor Truss - Unit - Prefabricated | 5d | 2026-09-18 | 2026-09-23 | A0190 | 0d |
| A0210 |  | Building 1 - Level 3 - Floor Truss - Corridor - Prefabricated | 5d | 2026-09-23 | 2026-09-28 | A0200 | 0d |
| A0220 |  | Building 1 - Level 3 - Layout | 3d | 2026-09-28 | 2026-10-01 | A0210 | 0d |
| A0230 |  | Building 1 - Level 3 - Wall Framing | 10d | 2026-10-01 | 2026-10-11 | A0220 | 0d |
| A0240 |  | Building 1 - Level 3 - Balcony - Framing | 3d | 2026-10-11 | 2026-10-14 | A0230 | 0d |
| A0250 |  | Building 1 - Level 3 - Sheathing - Stair Wall - Plywood | 6d | 2026-10-14 | 2026-10-20 | A0240 | 0d |
| A0260 |  | Building 1 - Level 3 - Sheathing - Exterior | 6d | 2026-10-20 | 2026-10-26 | A0250 | 0d |
| A0270 |  | Building 1 - Level 3 - Sheathing - Corridor - Plywood | 6d | 2026-10-26 | 2026-11-01 | A0260 | 0d |
| A0280 |  | Building 1 - Level 3 - Sheathing - Demising - Plywood | 6d | 2026-11-01 | 2026-11-07 | A0270 | 0d |
| A0290 |  | Building 1 - Level 3 - Hardware | 4d | 2026-11-07 | 2026-11-11 | A0280 | 0d |
| A0300 |  | Building 1 - Level 3 - Punchout | 3d | 2026-11-11 | 2026-11-14 | A0290 | 0d |
| A0310 |  | Building 1 - Level 4 - Floor Truss - Unit - Prefabricated | 5d | 2026-11-14 | 2026-11-19 | A0300 | 0d |
| A0320 |  | Building 1 - Level 4 - Floor Truss - Corridor - Prefabricated | 5d | 2026-11-19 | 2026-11-24 | A0310 | 0d |
| A0330 |  | Building 1 - Level 4 - Layout | 3d | 2026-11-24 | 2026-11-27 | A0320 | 0d |
| A0340 |  | Building 1 - Level 4 - Wall Framing | 10d | 2026-11-27 | 2026-12-07 | A0330 | 0d |
| A0350 |  | Building 1 - Level 4 - Balcony - Framing | 3d | 2026-12-07 | 2026-12-10 | A0340 | 0d |
| A0360 |  | Building 1 - Level 4 - Sheathing - Stair Wall - Plywood | 6d | 2026-12-10 | 2026-12-16 | A0350 | 0d |
| A0370 |  | Building 1 - Level 4 - Sheathing - Exterior | 6d | 2026-12-16 | 2026-12-22 | A0360 | 0d |
| A0380 |  | Building 1 - Level 4 - Sheathing - Demising - Plywood | 6d | 2026-12-22 | 2026-12-28 | A0370 | 0d |
| A0390 |  | Building 1 - Level 4 - Hardware | 4d | 2026-12-28 | 2027-01-01 | A0380 | 0d |
| A0400 |  | Building 1 - Level 4 - Punchout | 3d | 2027-01-01 | 2027-01-04 | A0390 | 0d |
| A0410 |  | Building 1 - Level 5 - Floor Truss - Unit - Prefabricated | 5d | 2027-01-04 | 2027-01-09 | A0400 | 0d |
| A0420 |  | Building 1 - Level 5 - Floor Truss - Corridor - Prefabricated | 5d | 2027-01-09 | 2027-01-14 | A0410 | 0d |
| A0430 |  | Building 1 - Level 5 - Layout | 3d | 2027-01-14 | 2027-01-17 | A0420 | 0d |
| A0440 |  | Building 1 - Level 5 - Wall Framing | 10d | 2027-01-17 | 2027-01-27 | A0430 | 0d |
| A0450 |  | Building 1 - Level 5 - Balcony - Framing | 3d | 2027-01-27 | 2027-01-30 | A0440 | 0d |
| A0460 |  | Building 1 - Level 5 - Sheathing - Stair Wall - Plywood | 6d | 2027-01-30 | 2027-02-05 | A0450 | 0d |
| A0470 |  | Building 1 - Level 5 - Sheathing - Exterior | 6d | 2027-02-05 | 2027-02-11 | A0460 | 0d |
| A0480 |  | Building 1 - Level 5 - Sheathing - Demising - Plywood | 6d | 2027-02-11 | 2027-02-17 | A0470 | 0d |
| A0490 |  | Building 1 - Level 5 - Hardware | 4d | 2027-02-17 | 2027-02-21 | A0480 | 0d |
| A0500 |  | Building 1 - Level 5 - Punchout | 3d | 2027-02-21 | 2027-02-24 | A0490 | 0d |
| A0510 |  | Building 1 - Roof Truss | 7d | 2027-02-24 | 2027-03-03 | A0500 | 0d |
