| id | p6_code | name | wbs | building | cost_code | activity_type | level | duration | start | finish | planned_start | planned_finish | pct_complete | status | builder_cost | client_price | profit | quantity | unit | bldg_seq | seq_no | total_float |
| --- | --- | --- | --- | --- | --- | --- | --- | --- | --- | --- | --- | --- | --- | --- | --- | --- | --- | --- | --- | --- | --- | --- |
| A0010 | A0010 | Building 1 - Level 1 - Layout | 01 - Framing | 01 - Framing | 101 - Layout - Labor | Building 1 - Level 1 - Layout | 1 | 3 | 2026-06-09 | 2026-06-12 | 2026-06-09 | 2026-06-12 | 0.0 | Not Started | 16153.3 | 0.0 | 0.0 | 0.0 | SF | 1 | 1 | 0 |
| A0020 | A0020 | Building 1 - Level 1 - Wall Framing | 01 - Framing | 01 - Framing | 102 - Framing - Labor | Building 1 - Level 1 - Wall Framing | 1 | 10 | 2026-06-12 | 2026-06-22 | 2026-06-12 | 2026-06-22 | 0.0 | Not Started | 71074.52 | 0.0 | 0.0 | 0.0 | SF | 1 | 2 | 0 |
| A0030 | A0030 | Building 1 - Level 1 - Sheathing - Stair Wall - Plywood | 01 - Framing | 01 - Framing | 104 - Shearwall - Labor | Building 1 - Level 1 - Sheathing - Stair Wall - Plywood | 1 | 6 | 2026-06-22 | 2026-06-28 | 2026-06-22 | 2026-06-28 | 0.0 | Not Started | 637.5 | 0.0 | 0.0 | 0.0 | Sheets | 1 | 3 | 0 |
| A0040 | A0040 | Building 1 - Level 1 - Sheathing - Exterior | 01 - Framing | 01 - Framing | 103 - Sheathing - Labor | Building 1 - Level 1 - Sheathing - Exterior | 1 | 6 | 2026-06-28 | 2026-07-04 | 2026-06-28 | 2026-07-04 | 0.0 | Not Started | 16153.3 | 0.0 | 0.0 | 0.0 | SF | 1 | 4 | 0 |
| A0050 | A0050 | Building 1 - Level 1 - Sheathing - Corridor - Plywood | 01 - Framing | 01 - Framing | 104 - Shearwall - Labor | Building 1 - Level 1 - Sheathing - Corridor - Plywood | 1 | 6 | 2026-07-04 | 2026-07-10 | 2026-07-04 | 2026-07-10 | 0.0 | Not Started | 2962.5 | 0.0 | 0.0 | 0.0 | Sheets | 1 | 5 | 0 |
| A0060 | A0060 | Building 1 - Level 1 - Sheathing - Demising - Plywood | 01 - Framing | 01 - Framing | 104 - Shearwall - Labor | Building 1 - Level 1 - Sheathing - Demising - Plywood | 1 | 6 | 2026-07-10 | 2026-07-16 | 2026-07-10 | 2026-07-16 | 0.0 | Not Started | 4593.75 | 0.0 | 0.0 | 0.0 | Sheets | 1 | 6 | 0 |
| A0070 | A0070 | Building 1 - Level 1 - Hardware | 01 - Framing | 01 - Framing | 109 - Hardware - Labor | Building 1 - Level 1 - Hardware | 1 | 4 | 2026-07-16 | 2026-07-20 | 2026-07-16 | 2026-07-20 | 0.0 | Not Started | 16153.3 | 0.0 | 0.0 | 0.0 | SF | 1 | 7 | 0 |
| A0080 | A0080 | Building 1 - Level 1 - Punchout | 01 - Framing | 01 - Framing | 115 - Punchout - Labor | Building 1 - Level 1 - Punchout | 1 | 3 | 2026-07-20 | 2026-07-23 | 2026-07-20 | 2026-07-23 | 0.0 | Not Started | 12922.64 | 0.0 | 0.0 | 0.0 | SF | 1 | 8 | 0 |
| A0090 | A0090 | Building 1 - Level 2 - Floor Truss - Unit - Prefabricated | 01 - Framing | 01 - Framing | 106 - Floor Truss - Labor | Building 1 - Level 2 - Floor Truss - Unit - Prefabricated | 2 | 5 | 2026-07-23 | 2026-07-28 | 2026-07-23 | 2026-07-28 | 0.0 | Not Started | 53790.0 | 0.0 | 0.0 | 0.0 | SF | 1 | 9 | 0 |
| A0100 | A0100 | Building 1 - Level 2 - Floor Truss - Corridor - Prefabricated | 01 - Framing | 01 - Framing | 106 - Floor Truss - Labor | Building 1 - Level 2 - Floor Truss - Corridor - Prefabricated | 2 | 5 | 2026-07-28 | 2026-08-02 | 2026-07-28 | 2026-08-02 | 0.0 | Not Started | 7810.0 | 0.0 | 0.0 | 0.0 | SF | 1 | 10 | 0 |
| A0110 | A0110 | Building 1 - Level 2 - Layout | 01 - Framing | 01 - Framing | 101 - Layout - Labor | Building 1 - Level 2 - Layout | 2 | 3 | 2026-08-02 | 2026-08-05 | 2026-08-02 | 2026-08-05 | 0.0 | Not Started | 15250.08 | 0.0 | 0.0 | 0.0 | SF | 1 | 11 | 0 |
| A0120 | A0120 | Building 1 - Level 2 - Wall Framing | 01 - Framing | 01 - Framing | 102 - Framing - Labor | Building 1 - Level 2 - Wall Framing | 2 | 10 | 2026-08-05 | 2026-08-15 | 2026-08-05 | 2026-08-15 | 0.0 | Not Started | 67100.33 | 0.0 | 0.0 | 0.0 | SF | 1 | 12 | 0 |
| A0130 | A0130 | Building 1 - Level 2 - Balcony - Framing | 01 - Framing | 01 - Framing | 108 - Balcony - Labor | Building 1 - Level 2 - Balcony - Framing | 2 | 3 | 2026-08-15 | 2026-08-18 | 2026-08-15 | 2026-08-18 | 0.0 | Not Started | 2000.0 | 0.0 | 0.0 | 0.0 | Each | 1 | 13 | 0 |
| A0140 | A0140 | Building 1 - Level 2 - Sheathing - Stair Wall - Plywood | 01 - Framing | 01 - Framing | 104 - Shearwall - Labor | Building 1 - Level 2 - Sheathing - Stair Wall - Plywood | 2 | 6 | 2026-08-18 | 2026-08-24 | 2026-08-18 | 2026-08-24 | 0.0 | Not Started | 506.25 | 0.0 | 0.0 | 0.0 | Sheets | 1 | 14 | 0 |
| A0150 | A0150 | Building 1 - Level 2 - Sheathing - Exterior | 01 - Framing | 01 - Framing | 103 - Sheathing - Labor | Building 1 - Level 2 - Sheathing - Exterior | 2 | 6 | 2026-08-24 | 2026-08-30 | 2026-08-24 | 2026-08-30 | 0.0 | Not Started | 15250.08 | 0.0 | 0.0 | 0.0 | SF | 1 | 15 | 0 |
| A0160 | A0160 | Building 1 - Level 2 - Sheathing - Corridor - Plywood | 01 - Framing | 01 - Framing | 104 - Shearwall - Labor | Building 1 - Level 2 - Sheathing - Corridor - Plywood | 2 | 6 | 2026-08-30 | 2026-09-05 | 2026-08-30 | 2026-09-05 | 0.0 | Not Started | 2906.25 | 0.0 | 0.0 | 0.0 | Sheets | 1 | 16 | 0 |
| A0170 | A0170 | Building 1 - Level 2 - Sheathing - Demising - Plywood | 01 - Framing | 01 - Framing | 104 - Shearwall - Labor | Building 1 - Level 2 - Sheathing - Demising - Plywood | 2 | 6 | 2026-09-05 | 2026-09-11 | 2026-09-05 | 2026-09-11 | 0.0 | Not Started | 4425.0 | 0.0 | 0.0 | 0.0 | Sheets | 1 | 17 | 0 |
| A0180 | A0180 | Building 1 - Level 2 - Hardware | 01 - Framing | 01 - Framing | 109 - Hardware - Labor | Building 1 - Level 2 - Hardware | 2 | 4 | 2026-09-11 | 2026-09-15 | 2026-09-11 | 2026-09-15 | 0.0 | Not Started | 15250.08 | 0.0 | 0.0 | 0.0 | SF | 1 | 18 | 0 |
| A0190 | A0190 | Building 1 - Level 2 - Punchout | 01 - Framing | 01 - Framing | 115 - Punchout - Labor | Building 1 - Level 2 - Punchout | 2 | 3 | 2026-09-15 | 2026-09-18 | 2026-09-15 | 2026-09-18 | 0.0 | Not Started | 12200.06 | 0.0 | 0.0 | 0.0 | SF | 1 | 19 | 0 |
| A0200 | A0200 | Building 1 - Level 3 - Floor Truss - Unit - Prefabricated | 01 - Framing | 01 - Framing | 106 - Floor Truss - Labor | Building 1 - Level 3 - Floor Truss - Unit - Prefabricated | 3 | 5 | 2026-09-18 | 2026-09-23 | 2026-09-18 | 2026-09-23 | 0.0 | Not Started | 53790.0 | 0.0 | 0.0 | 0.0 | SF | 1 | 20 | 0 |
| A0210 | A0210 | Building 1 - Level 3 - Floor Truss - Corridor - Prefabricated | 01 - Framing | 01 - Framing | 106 - Floor Truss - Labor | Building 1 - Level 3 - Floor Truss - Corridor - Prefabricated | 3 | 5 | 2026-09-23 | 2026-09-28 | 2026-09-23 | 2026-09-28 | 0.0 | Not Started | 8288.5 | 0.0 | 0.0 | 0.0 | SF | 1 | 21 | 0 |
| A0220 | A0220 | Building 1 - Level 3 - Layout | 01 - Framing | 01 - Framing | 101 - Layout - Labor | Building 1 - Level 3 - Layout | 3 | 3 | 2026-09-28 | 2026-10-01 | 2026-09-28 | 2026-10-01 | 0.0 | Not Started | 15725.65 | 0.0 | 0.0 | 0.0 | SF | 1 | 22 | 0 |
| A0230 | A0230 | Building 1 - Level 3 - Wall Framing | 01 - Framing | 01 - Framing | 102 - Framing - Labor | Building 1 - Level 3 - Wall Framing | 3 | 10 | 2026-10-01 | 2026-10-11 | 2026-10-01 | 2026-10-11 | 0.0 | Not Started | 69192.86 | 0.0 | 0.0 | 0.0 | SF | 1 | 23 | 0 |
| A0240 | A0240 | Building 1 - Level 3 - Balcony - Framing | 01 - Framing | 01 - Framing | 108 - Balcony - Labor | Building 1 - Level 3 - Balcony - Framing | 3 | 3 | 2026-10-11 | 2026-10-14 | 2026-10-11 | 2026-10-14 | 0.0 | Not Started | 3000.0 | 0.0 | 0.0 | 0.0 | Each | 1 | 24 | 0 |
| A0250 | A0250 | Building 1 - Level 3 - Sheathing - Stair Wall - Plywood | 01 - Framing | 01 - Framing | 104 - Shearwall - Labor | Building 1 - Level 3 - Sheathing - Stair Wall - Plywood | 3 | 6 | 2026-10-14 | 2026-10-20 | 2026-10-14 | 2026-10-20 | 0.0 | Not Started | 618.75 | 0.0 | 0.0 | 0.0 | Sheets | 1 | 25 | 0 |
| A0260 | A0260 | Building 1 - Level 3 - Sheathing - Exterior | 01 - Framing | 01 - Framing | 103 - Sheathing - Labor | Building 1 - Level 3 - Sheathing - Exterior | 3 | 6 | 2026-10-20 | 2026-10-26 | 2026-10-20 | 2026-10-26 | 0.0 | Not Started | 15725.65 | 0.0 | 0.0 | 0.0 | SF | 1 | 26 | 0 |
| A0270 | A0270 | Building 1 - Level 3 - Sheathing - Corridor - Plywood | 01 - Framing | 01 - Framing | 104 - Shearwall - Labor | Building 1 - Level 3 - Sheathing - Corridor - Plywood | 3 | 6 | 2026-10-26 | 2026-11-01 | 2026-10-26 | 2026-11-01 | 0.0 | Not Started | 3300.0 | 0.0 | 0.0 | 0.0 | Sheets | 1 | 27 | 0 |
| A0280 | A0280 | Building 1 - Level 3 - Sheathing - Demising - Plywood | 01 - Framing | 01 - Framing | 104 - Shearwall - Labor | Building 1 - Level 3 - Sheathing - Demising - Plywood | 3 | 6 | 2026-11-01 | 2026-11-07 | 2026-11-01 | 2026-11-07 | 0.0 | Not Started | 5512.5 | 0.0 | 0.0 | 0.0 | Sheets | 1 | 28 | 0 |
| A0290 | A0290 | Building 1 - Level 3 - Hardware | 01 - Framing | 01 - Framing | 109 - Hardware - Labor | Building 1 - Level 3 - Hardware | 3 | 4 | 2026-11-07 | 2026-11-11 | 2026-11-07 | 2026-11-11 | 0.0 | Not Started | 15725.65 | 0.0 | 0.0 | 0.0 | SF | 1 | 29 | 0 |
| A0300 | A0300 | Building 1 - Level 3 - Punchout | 01 - Framing | 01 - Framing | 115 - Punchout - Labor | Building 1 - Level 3 - Punchout | 3 | 3 | 2026-11-11 | 2026-11-14 | 2026-11-11 | 2026-11-14 | 0.0 | Not Started | 12580.52 | 0.0 | 0.0 | 0.0 | SF | 1 | 30 | 0 |
| A0310 | A0310 | Building 1 - Level 4 - Floor Truss - Unit - Prefabricated | 01 - Framing | 01 - Framing | 106 - Floor Truss - Labor | Building 1 - Level 4 - Floor Truss - Unit - Prefabricated | 4 | 5 | 2026-11-14 | 2026-11-19 | 2026-11-14 | 2026-11-19 | 0.0 | Not Started | 59290.0 | 0.0 | 0.0 | 0.0 | SF | 1 | 31 | 0 |
| A0320 | A0320 | Building 1 - Level 4 - Floor Truss - Corridor - Prefabricated | 01 - Framing | 01 - Framing | 106 - Floor Truss - Labor | Building 1 - Level 4 - Floor Truss - Corridor - Prefabricated | 4 | 5 | 2026-11-19 | 2026-11-24 | 2026-11-19 | 2026-11-24 | 0.0 | Not Started | 8151.0 | 0.0 | 0.0 | 0.0 | SF | 1 | 32 | 0 |
| A0330 | A0330 | Building 1 - Level 4 - Layout | 01 - Framing | 01 - Framing | 101 - Layout - Labor | Building 1 - Level 4 - Layout | 4 | 3 | 2026-11-24 | 2026-11-27 | 2026-11-24 | 2026-11-27 | 0.0 | Not Started | 15736.17 | 0.0 | 0.0 | 0.0 | SF | 1 | 33 | 0 |
| A0340 | A0340 | Building 1 - Level 4 - Wall Framing | 01 - Framing | 01 - Framing | 102 - Framing - Labor | Building 1 - Level 4 - Wall Framing | 4 | 10 | 2026-11-27 | 2026-12-07 | 2026-11-27 | 2026-12-07 | 0.0 | Not Started | 69239.17 | 0.0 | 0.0 | 0.0 | SF | 1 | 34 | 0 |
| A0350 | A0350 | Building 1 - Level 4 - Balcony - Framing | 01 - Framing | 01 - Framing | 108 - Balcony - Labor | Building 1 - Level 4 - Balcony - Framing | 4 | 3 | 2026-12-07 | 2026-12-10 | 2026-12-07 | 2026-12-10 | 0.0 | Not Started | 3000.0 | 0.0 | 0.0 | 0.0 | Each | 1 | 35 | 0 |
| A0360 | A0360 | Building 1 - Level 4 - Sheathing - Stair Wall - Plywood | 01 - Framing | 01 - Framing | 104 - Shearwall - Labor | Building 1 - Level 4 - Sheathing - Stair Wall - Plywood | 4 | 6 | 2026-12-10 | 2026-12-16 | 2026-12-10 | 2026-12-16 | 0.0 | Not Started | 375.0 | 0.0 | 0.0 | 0.0 | Sheets | 1 | 36 | 0 |
| A0370 | A0370 | Building 1 - Level 4 - Sheathing - Exterior | 01 - Framing | 01 - Framing | 103 - Sheathing - Labor | Building 1 - Level 4 - Sheathing - Exterior | 4 | 6 | 2026-12-16 | 2026-12-22 | 2026-12-16 | 2026-12-22 | 0.0 | Not Started | 15736.17 | 0.0 | 0.0 | 0.0 | SF | 1 | 37 | 0 |
| A0380 | A0380 | Building 1 - Level 4 - Sheathing - Demising - Plywood | 01 - Framing | 01 - Framing | 104 - Shearwall - Labor | Building 1 - Level 4 - Sheathing - Demising - Plywood | 4 | 6 | 2026-12-22 | 2026-12-28 | 2026-12-22 | 2026-12-28 | 0.0 | Not Started | 5493.75 | 0.0 | 0.0 | 0.0 | Sheets | 1 | 38 | 0 |
| A0390 | A0390 | Building 1 - Level 4 - Hardware | 01 - Framing | 01 - Framing | 109 - Hardware - Labor | Building 1 - Level 4 - Hardware | 4 | 4 | 2026-12-28 | 2027-01-01 | 2026-12-28 | 2027-01-01 | 0.0 | Not Started | 15736.17 | 0.0 | 0.0 | 0.0 | SF | 1 | 39 | 0 |
| A0400 | A0400 | Building 1 - Level 4 - Punchout | 01 - Framing | 01 - Framing | 115 - Punchout - Labor | Building 1 - Level 4 - Punchout | 4 | 3 | 2027-01-01 | 2027-01-04 | 2027-01-01 | 2027-01-04 | 0.0 | Not Started | 12588.94 | 0.0 | 0.0 | 0.0 | SF | 1 | 40 | 0 |
| A0410 | A0410 | Building 1 - Level 5 - Floor Truss - Unit - Prefabricated | 01 - Framing | 01 - Framing | 106 - Floor Truss - Labor | Building 1 - Level 5 - Floor Truss - Unit - Prefabricated | 5 | 5 | 2027-01-04 | 2027-01-09 | 2027-01-04 | 2027-01-09 | 0.0 | Not Started | 59290.0 | 0.0 | 0.0 | 0.0 | SF | 1 | 41 | 0 |
| A0420 | A0420 | Building 1 - Level 5 - Floor Truss - Corridor - Prefabricated | 01 - Framing | 01 - Framing | 106 - Floor Truss - Labor | Building 1 - Level 5 - Floor Truss - Corridor - Prefabricated | 5 | 5 | 2027-01-09 | 2027-01-14 | 2027-01-09 | 2027-01-14 | 0.0 | Not Started | 8151.0 | 0.0 | 0.0 | 0.0 | SF | 1 | 42 | 0 |
| A0430 | A0430 | Building 1 - Level 5 - Layout | 01 - Framing | 01 - Framing | 101 - Layout - Labor | Building 1 - Level 5 - Layout | 5 | 3 | 2027-01-14 | 2027-01-17 | 2027-01-14 | 2027-01-17 | 0.0 | Not Started | 15736.88 | 0.0 | 0.0 | 0.0 | SF | 1 | 43 | 0 |
| A0440 | A0440 | Building 1 - Level 5 - Wall Framing | 01 - Framing | 01 - Framing | 102 - Framing - Labor | Building 1 - Level 5 - Wall Framing | 5 | 10 | 2027-01-17 | 2027-01-27 | 2027-01-17 | 2027-01-27 | 0.0 | Not Started | 69242.25 | 0.0 | 0.0 | 0.0 | SF | 1 | 44 | 0 |
| A0450 | A0450 | Building 1 - Level 5 - Balcony - Framing | 01 - Framing | 01 - Framing | 108 - Balcony - Labor | Building 1 - Level 5 - Balcony - Framing | 5 | 3 | 2027-01-27 | 2027-01-30 | 2027-01-27 | 2027-01-30 | 0.0 | Not Started | 3000.0 | 0.0 | 0.0 | 0.0 | Each | 1 | 45 | 0 |
| A0460 | A0460 | Building 1 - Level 5 - Sheathing - Stair Wall - Plywood | 01 - Framing | 01 - Framing | 104 - Shearwall - Labor | Building 1 - Level 5 - Sheathing - Stair Wall - Plywood | 5 | 6 | 2027-01-30 | 2027-02-05 | 2027-01-30 | 2027-02-05 | 0.0 | Not Started | 75.0 | 0.0 | 0.0 | 0.0 | Sheets | 1 | 46 | 0 |
| A0470 | A0470 | Building 1 - Level 5 - Sheathing - Exterior | 01 - Framing | 01 - Framing | 103 - Sheathing - Labor | Building 1 - Level 5 - Sheathing - Exterior | 5 | 6 | 2027-02-05 | 2027-02-11 | 2027-02-05 | 2027-02-11 | 0.0 | Not Started | 15736.88 | 0.0 | 0.0 | 0.0 | SF | 1 | 47 | 0 |
| A0480 | A0480 | Building 1 - Level 5 - Sheathing - Demising - Plywood | 01 - Framing | 01 - Framing | 104 - Shearwall - Labor | Building 1 - Level 5 - Sheathing - Demising - Plywood | 5 | 6 | 2027-02-11 | 2027-02-17 | 2027-02-11 | 2027-02-17 | 0.0 | Not Started | 5250.0 | 0.0 | 0.0 | 0.0 | Sheets | 1 | 48 | 0 |
| A0490 | A0490 | Building 1 - Level 5 - Hardware | 01 - Framing | 01 - Framing | 109 - Hardware - Labor | Building 1 - Level 5 - Hardware | 5 | 4 | 2027-02-17 | 2027-02-21 | 2027-02-17 | 2027-02-21 | 0.0 | Not Started | 15736.88 | 0.0 | 0.0 | 0.0 | SF | 1 | 49 | 0 |
| A0500 | A0500 | Building 1 - Level 5 - Punchout | 01 - Framing | 01 - Framing | 115 - Punchout - Labor | Building 1 - Level 5 - Punchout | 5 | 3 | 2027-02-21 | 2027-02-24 | 2027-02-21 | 2027-02-24 | 0.0 | Not Started | 12589.5 | 0.0 | 0.0 | 0.0 | SF | 1 | 50 | 0 |
| A0510 | A0510 | Building 1 - Roof Truss | 01 - Framing | 01 - Framing | 107 - Roof Truss - Labor | Building 1 - Roof Truss |  | 7 | 2027-02-24 | 2027-03-03 | 2027-02-24 | 2027-03-03 | 0.0 | Not Started | 129392.0 | 0.0 | 0.0 | 0.0 | SF | 1 | 51 | 0 |
