| id | p6_code | name | wbs | building | cost_code | activity_type | level | duration | start | finish | planned_start | planned_finish | pct_complete | status | builder_cost | client_price | profit | quantity | unit | bldg_seq | seq_no | total_float |
| --- | --- | --- | --- | --- | --- | --- | --- | --- | --- | --- | --- | --- | --- | --- | --- | --- | --- | --- | --- | --- | --- | --- |
| A0010 | A0010 | Building 1 - Level 1 - Layout | 01 - Framing | 01 - Framing | 101 - Layout - Labor | Building 1 - Level 1 - Layout | 1 | 1 | 2026-06-09 | 2026-06-09 | 2026-06-09 | 2026-06-09 | 0 | Not Started | 16153.3 | 0 | 0.0 | 0.0 | SF | 1 | 1 | 0 |
| A0020 | A0020 | Building 1 - Level 1 - Wall Framing | 01 - Framing | 01 - Framing | 102 - Framing - Labor | Building 1 - Level 1 - Wall Framing | 1 | 2 | 2026-06-11 | 2026-06-12 | 2026-06-11 | 2026-06-12 | 0 | Not Started | 71074.52 | 0 | 0.0 | 0.0 | SF | 1 | 2 | 0 |
| A0030 | A0030 | Building 1 - Level 1 - Sheathing - Stair Wall - Plywood | 01 - Framing | 01 - Framing | 104 - Shearwall - Labor | Building 1 - Level 1 - Sheathing - Stair Wall - Plywood | 1 | 2 | 2026-07-02 | 2026-07-03 | 2026-07-02 | 2026-07-03 | 0 | Not Started | 637.5 | 0 | 0.0 | 0.0 | Sheets | 1 | 8 | 0 |
| A0040 | A0040 | Building 1 - Level 1 - Sheathing - Exterior | 01 - Framing | 01 - Framing | 103 - Sheathing - Labor | Building 1 - Level 1 - Sheathing - Exterior | 1 | 3 | 2026-06-16 | 2026-06-18 | 2026-06-16 | 2026-06-18 | 0 | Not Started | 16153.3 | 0 | 0.0 | 0.0 | SF | 1 | 4 | 0 |
| A0050 | A0050 | Building 1 - Level 1 - Sheathing - Corridor - Plywood | 01 - Framing | 01 - Framing | 104 - Shearwall - Labor | Building 1 - Level 1 - Sheathing - Corridor - Plywood | 1 | 1 | 2026-06-27 | 2026-06-27 | 2026-06-27 | 2026-06-27 | 0 | Not Started | 2962.5 | 0 | 0.0 | 0.0 | Sheets | 1 | 6 | 0 |
| A0060 | A0060 | Building 1 - Level 1 - Sheathing - Demising - Plywood | 01 - Framing | 01 - Framing | 104 - Shearwall - Labor | Building 1 - Level 1 - Sheathing - Demising - Plywood | 1 | 5 | 2026-06-13 | 2026-06-18 | 2026-06-13 | 2026-06-18 | 0 | Not Started | 4593.75 | 0 | 0.0 | 0.0 | Sheets | 1 | 3 | 0 |
| A0070 | A0070 | Building 1 - Level 1 - Hardware | 01 - Framing | 01 - Framing | 109 - Hardware - Labor | Building 1 - Level 1 - Hardware | 1 | 7 | 2026-06-19 | 2026-06-26 | 2026-06-19 | 2026-06-26 | 0.0 | Not Started | 16153.3 | 0.0 | 0.0 | 0.0 | SF | 1 | 5 | 0 |
| A0080 | A0080 | Building 1 - Level 1 - Punchout | 01 - Framing | 01 - Framing | 115 - Punchout - Labor | Building 1 - Level 1 - Punchout | 1 | 3 | 2026-06-29 | 2026-07-01 | 2026-06-29 | 2026-07-01 | 0.0 | Not Started | 12922.64 | 0.0 | 0.0 | 0.0 | SF | 1 | 7 | 0 |
| A0090 | A0090 | Building 1 - Level 2 - Floor Truss - Unit - Prefabricated | 01 - Framing | 01 - Framing | 106 - Floor Truss - Labor | Building 1 - Level 2 - Floor Truss - Unit - Prefabricated | 2 | 5 | 2026-07-04 | 2026-07-09 | 2026-07-04 | 2026-07-09 | 0.0 | Not Started | 53790.0 | 0.0 | 0.0 | 0.0 | SF | 1 | 9 | 0 |
| A0100 | A0100 | Building 1 - Level 2 - Floor Truss - Corridor - Prefabricated | 01 - Framing | 01 - Framing | 106 - Floor Truss - Labor | Building 1 - Level 2 - Floor Truss - Corridor - Prefabricated | 2 | 5 | 2026-07-10 | 2026-07-15 | 2026-07-10 | 2026-07-15 | 0.0 | Not Started | 7810.0 | 0.0 | 0.0 | 0.0 | SF | 1 | 10 | 0 |
| A0110 | A0110 | Building 1 - Level 2 - Layout | 01 - Framing | 01 - Framing | 101 - Layout - Labor | Building 1 - Level 2 - Layout | 2 | 3 | 2026-07-16 | 2026-07-18 | 2026-07-16 | 2026-07-18 | 0.0 | Not Started | 15250.08 | 0.0 | 0.0 | 0.0 | SF | 1 | 11 | 0 |
| A0120 | A0120 | Building 1 - Level 2 - Wall Framing | 01 - Framing | 01 - Framing | 102 - Framing - Labor | Building 1 - Level 2 - Wall Framing | 2 | 4 | 2026-07-20 | 2026-07-23 | 2026-07-20 | 2026-07-23 | 0.0 | Not Started | 67100.33 | 0.0 | 0.0 | 0.0 | SF | 1 | 12 | 0 |
| A0130 | A0130 | Building 1 - Level 2 - Balcony - Framing | 01 - Framing | 01 - Framing | 108 - Balcony - Labor | Building 1 - Level 2 - Balcony - Framing | 2 | 3 | 2026-07-24 | 2026-07-27 | 2026-07-24 | 2026-07-27 | 0.0 | Not Started | 2000.0 | 0.0 | 0.0 | 0.0 | Each | 1 | 13 | 0 |
| A0140 | A0140 | Building 1 - Level 2 - Sheathing - Stair Wall - Plywood | 01 - Framing | 01 - Framing | 104 - Shearwall - Labor | Building 1 - Level 2 - Sheathing - Stair Wall - Plywood | 2 | 6 | 2026-07-28 | 2026-08-03 | 2026-07-28 | 2026-08-03 | 0.0 | Not Started | 506.25 | 0.0 | 0.0 | 0.0 | Sheets | 1 | 14 | 0 |
| A0150 | A0150 | Building 1 - Level 2 - Sheathing - Exterior | 01 - Framing | 01 - Framing | 103 - Sheathing - Labor | Building 1 - Level 2 - Sheathing - Exterior | 2 | 6 | 2026-08-04 | 2026-08-10 | 2026-08-04 | 2026-08-10 | 0.0 | Not Started | 15250.08 | 0.0 | 0.0 | 0.0 | SF | 1 | 15 | 0 |
| A0160 | A0160 | Building 1 - Level 2 - Sheathing - Corridor - Plywood | 01 - Framing | 01 - Framing | 104 - Shearwall - Labor | Building 1 - Level 2 - Sheathing - Corridor - Plywood | 2 | 6 | 2026-08-11 | 2026-08-17 | 2026-08-11 | 2026-08-17 | 0.0 | Not Started | 2906.25 | 0.0 | 0.0 | 0.0 | Sheets | 1 | 16 | 0 |
| A0170 | A0170 | Building 1 - Level 2 - Sheathing - Demising - Plywood | 01 - Framing | 01 - Framing | 104 - Shearwall - Labor | Building 1 - Level 2 - Sheathing - Demising - Plywood | 2 | 6 | 2026-08-18 | 2026-08-24 | 2026-08-18 | 2026-08-24 | 0.0 | Not Started | 4425.0 | 0.0 | 0.0 | 0.0 | Sheets | 1 | 17 | 0 |
| A0180 | A0180 | Building 1 - Level 2 - Hardware | 01 - Framing | 01 - Framing | 109 - Hardware - Labor | Building 1 - Level 2 - Hardware | 2 | 4 | 2026-08-25 | 2026-08-28 | 2026-08-25 | 2026-08-28 | 0.0 | Not Started | 15250.08 | 0.0 | 0.0 | 0.0 | SF | 1 | 18 | 0 |
| A0190 | A0190 | Building 1 - Level 2 - Punchout | 01 - Framing | 01 - Framing | 115 - Punchout - Labor | Building 1 - Level 2 - Punchout | 2 | 2 | 2026-08-29 | 2026-08-31 | 2026-08-29 | 2026-08-31 | 0.0 | Not Started | 12200.06 | 0.0 | 0.0 | 0.0 | SF | 1 | 19 | 0 |
| A0200 | A0200 | Building 1 - Level 3 - Floor Truss - Unit - Prefabricated | 01 - Framing | 01 - Framing | 106 - Floor Truss - Labor | Building 1 - Level 3 - Floor Truss - Unit - Prefabricated | 3 | 4 | 2026-09-01 | 2026-09-04 | 2026-09-01 | 2026-09-04 | 0.0 | Not Started | 53790.0 | 0.0 | 0.0 | 0.0 | SF | 1 | 20 | 0 |
| A0210 | A0210 | Building 1 - Level 3 - Floor Truss - Corridor - Prefabricated | 01 - Framing | 01 - Framing | 106 - Floor Truss - Labor | Building 1 - Level 3 - Floor Truss - Corridor - Prefabricated | 3 | 5 | 2026-09-05 | 2026-09-10 | 2026-09-05 | 2026-09-10 | 0.0 | Not Started | 8288.5 | 0.0 | 0.0 | 0.0 | SF | 1 | 21 | 0 |
| A0220 | A0220 | Building 1 - Level 3 - Layout | 01 - Framing | 01 - Framing | 101 - Layout - Labor | Building 1 - Level 3 - Layout | 3 | 3 | 2026-09-11 | 2026-09-14 | 2026-09-11 | 2026-09-14 | 0.0 | Not Started | 15725.65 | 0.0 | 0.0 | 0.0 | SF | 1 | 22 | 0 |
| A0230 | A0230 | Building 1 - Level 3 - Wall Framing | 01 - Framing | 01 - Framing | 102 - Framing - Labor | Building 1 - Level 3 - Wall Framing | 3 | 10 | 2026-09-15 | 2026-09-25 | 2026-09-15 | 2026-09-25 | 0.0 | Not Started | 69192.86 | 0.0 | 0.0 | 0.0 | SF | 1 | 23 | 0 |
| A0240 | A0240 | Building 1 - Level 3 - Balcony - Framing | 01 - Framing | 01 - Framing | 108 - Balcony - Labor | Building 1 - Level 3 - Balcony - Framing | 3 | 3 | 2026-09-26 | 2026-09-29 | 2026-09-26 | 2026-09-29 | 0.0 | Not Started | 3000.0 | 0.0 | 0.0 | 0.0 | Each | 1 | 24 | 0 |
| A0250 | A0250 | Building 1 - Level 3 - Sheathing - Stair Wall - Plywood | 01 - Framing | 01 - Framing | 104 - Shearwall - Labor | Building 1 - Level 3 - Sheathing - Stair Wall - Plywood | 3 | 6 | 2026-09-30 | 2026-10-06 | 2026-09-30 | 2026-10-06 | 0.0 | Not Started | 618.75 | 0.0 | 0.0 | 0.0 | Sheets | 1 | 25 | 0 |
| A0260 | A0260 | Building 1 - Level 3 - Sheathing - Exterior | 01 - Framing | 01 - Framing | 103 - Sheathing - Labor | Building 1 - Level 3 - Sheathing - Exterior | 3 | 6 | 2026-10-07 | 2026-10-13 | 2026-10-07 | 2026-10-13 | 0.0 | Not Started | 15725.65 | 0.0 | 0.0 | 0.0 | SF | 1 | 26 | 0 |
| A0270 | A0270 | Building 1 - Level 3 - Sheathing - Corridor - Plywood | 01 - Framing | 01 - Framing | 104 - Shearwall - Labor | Building 1 - Level 3 - Sheathing - Corridor - Plywood | 3 | 6 | 2026-10-14 | 2026-10-20 | 2026-10-14 | 2026-10-20 | 0.0 | Not Started | 3300.0 | 0.0 | 0.0 | 0.0 | Sheets | 1 | 27 | 0 |
| A0280 | A0280 | Building 1 - Level 3 - Sheathing - Demising - Plywood | 01 - Framing | 01 - Framing | 104 - Shearwall - Labor | Building 1 - Level 3 - Sheathing - Demising - Plywood | 3 | 6 | 2026-10-21 | 2026-10-27 | 2026-10-21 | 2026-10-27 | 0.0 | Not Started | 5512.5 | 0.0 | 0.0 | 0.0 | Sheets | 1 | 28 | 0 |
| A0290 | A0290 | Building 1 - Level 3 - Hardware | 01 - Framing | 01 - Framing | 109 - Hardware - Labor | Building 1 - Level 3 - Hardware | 3 | 4 | 2026-10-28 | 2026-10-31 | 2026-10-28 | 2026-10-31 | 0.0 | Not Started | 15725.65 | 0.0 | 0.0 | 0.0 | SF | 1 | 29 | 0 |
| A0300 | A0300 | Building 1 - Level 3 - Punchout | 01 - Framing | 01 - Framing | 115 - Punchout - Labor | Building 1 - Level 3 - Punchout | 3 | 3 | 2026-11-02 | 2026-11-04 | 2026-11-02 | 2026-11-04 | 0.0 | Not Started | 12580.52 | 0.0 | 0.0 | 0.0 | SF | 1 | 30 | 0 |
| A0310 | A0310 | Building 1 - Level 4 - Floor Truss - Unit - Prefabricated | 01 - Framing | 01 - Framing | 106 - Floor Truss - Labor | Building 1 - Level 4 - Floor Truss - Unit - Prefabricated | 4 | 5 | 2026-11-05 | 2026-11-10 | 2026-11-05 | 2026-11-10 | 0.0 | Not Started | 59290.0 | 0.0 | 0.0 | 0.0 | SF | 1 | 31 | 0 |
| A0320 | A0320 | Building 1 - Level 4 - Floor Truss - Corridor - Prefabricated | 01 - Framing | 01 - Framing | 106 - Floor Truss - Labor | Building 1 - Level 4 - Floor Truss - Corridor - Prefabricated | 4 | 5 | 2026-11-11 | 2026-11-16 | 2026-11-11 | 2026-11-16 | 0.0 | Not Started | 8151.0 | 0.0 | 0.0 | 0.0 | SF | 1 | 32 | 0 |
| A0330 | A0330 | Building 1 - Level 4 - Layout | 01 - Framing | 01 - Framing | 101 - Layout - Labor | Building 1 - Level 4 - Layout | 4 | 3 | 2026-11-17 | 2026-11-19 | 2026-11-17 | 2026-11-19 | 0.0 | Not Started | 15736.17 | 0.0 | 0.0 | 0.0 | SF | 1 | 33 | 0 |
| A0340 | A0340 | Building 1 - Level 4 - Wall Framing | 01 - Framing | 01 - Framing | 102 - Framing - Labor | Building 1 - Level 4 - Wall Framing | 4 | 10 | 2026-11-20 | 2026-12-01 | 2026-11-20 | 2026-12-01 | 0.0 | Not Started | 69239.17 | 0.0 | 0.0 | 0.0 | SF | 1 | 34 | 0 |
| A0350 | A0350 | Building 1 - Level 4 - Balcony - Framing | 01 - Framing | 01 - Framing | 108 - Balcony - Labor | Building 1 - Level 4 - Balcony - Framing | 4 | 3 | 2026-12-02 | 2026-12-04 | 2026-12-02 | 2026-12-04 | 0.0 | Not Started | 3000.0 | 0.0 | 0.0 | 0.0 | Each | 1 | 35 | 0 |
| A0360 | A0360 | Building 1 - Level 4 - Sheathing - Stair Wall - Plywood | 01 - Framing | 01 - Framing | 104 - Shearwall - Labor | Building 1 - Level 4 - Sheathing - Stair Wall - Plywood | 4 | 6 | 2026-12-05 | 2026-12-11 | 2026-12-05 | 2026-12-11 | 0.0 | Not Started | 375.0 | 0.0 | 0.0 | 0.0 | Sheets | 1 | 36 | 0 |
| A0370 | A0370 | Building 1 - Level 4 - Sheathing - Exterior | 01 - Framing | 01 - Framing | 103 - Sheathing - Labor | Building 1 - Level 4 - Sheathing - Exterior | 4 | 6 | 2026-12-12 | 2026-12-18 | 2026-12-12 | 2026-12-18 | 0.0 | Not Started | 15736.17 | 0.0 | 0.0 | 0.0 | SF | 1 | 37 | 0 |
| A0380 | A0380 | Building 1 - Level 4 - Sheathing - Demising - Plywood | 01 - Framing | 01 - Framing | 104 - Shearwall - Labor | Building 1 - Level 4 - Sheathing - Demising - Plywood | 4 | 6 | 2026-12-19 | 2026-12-25 | 2026-12-19 | 2026-12-25 | 0.0 | Not Started | 5493.75 | 0.0 | 0.0 | 0.0 | Sheets | 1 | 38 | 0 |
| A0390 | A0390 | Building 1 - Level 4 - Hardware | 01 - Framing | 01 - Framing | 109 - Hardware - Labor | Building 1 - Level 4 - Hardware | 4 | 4 | 2026-12-26 | 2026-12-30 | 2026-12-26 | 2026-12-30 | 0.0 | Not Started | 15736.17 | 0.0 | 0.0 | 0.0 | SF | 1 | 39 | 0 |
| A0400 | A0400 | Building 1 - Level 4 - Punchout | 01 - Framing | 01 - Framing | 115 - Punchout - Labor | Building 1 - Level 4 - Punchout | 4 | 3 | 2026-12-31 | 2027-01-02 | 2026-12-31 | 2027-01-02 | 0.0 | Not Started | 12588.94 | 0.0 | 0.0 | 0.0 | SF | 1 | 40 | 0 |
| A0410 | A0410 | Building 1 - Level 5 - Floor Truss - Unit - Prefabricated | 01 - Framing | 01 - Framing | 106 - Floor Truss - Labor | Building 1 - Level 5 - Floor Truss - Unit - Prefabricated | 5 | 5 | 2027-01-04 | 2027-01-08 | 2027-01-04 | 2027-01-08 | 0.0 | Not Started | 59290.0 | 0.0 | 0.0 | 0.0 | SF | 1 | 41 | 0 |
| A0420 | A0420 | Building 1 - Level 5 - Floor Truss - Corridor - Prefabricated | 01 - Framing | 01 - Framing | 106 - Floor Truss - Labor | Building 1 - Level 5 - Floor Truss - Corridor - Prefabricated | 5 | 5 | 2027-01-09 | 2027-01-14 | 2027-01-09 | 2027-01-14 | 0.0 | Not Started | 8151.0 | 0.0 | 0.0 | 0.0 | SF | 1 | 42 | 0 |
| A0430 | A0430 | Building 1 - Level 5 - Layout | 01 - Framing | 01 - Framing | 101 - Layout - Labor | Building 1 - Level 5 - Layout | 5 | 3 | 2027-01-15 | 2027-01-18 | 2027-01-15 | 2027-01-18 | 0.0 | Not Started | 15736.88 | 0.0 | 0.0 | 0.0 | SF | 1 | 43 | 0 |
| A0440 | A0440 | Building 1 - Level 5 - Wall Framing | 01 - Framing | 01 - Framing | 102 - Framing - Labor | Building 1 - Level 5 - Wall Framing | 5 | 10 | 2027-01-19 | 2027-01-29 | 2027-01-19 | 2027-01-29 | 0.0 | Not Started | 69242.25 | 0.0 | 0.0 | 0.0 | SF | 1 | 44 | 0 |
| A0450 | A0450 | Building 1 - Level 5 - Balcony - Framing | 01 - Framing | 01 - Framing | 108 - Balcony - Labor | Building 1 - Level 5 - Balcony - Framing | 5 | 3 | 2027-01-30 | 2027-02-02 | 2027-01-30 | 2027-02-02 | 0.0 | Not Started | 3000.0 | 0.0 | 0.0 | 0.0 | Each | 1 | 45 | 0 |
| A0460 | A0460 | Building 1 - Level 5 - Sheathing - Stair Wall - Plywood | 01 - Framing | 01 - Framing | 104 - Shearwall - Labor | Building 1 - Level 5 - Sheathing - Stair Wall - Plywood | 5 | 6 | 2027-02-03 | 2027-02-09 | 2027-02-03 | 2027-02-09 | 0.0 | Not Started | 75.0 | 0.0 | 0.0 | 0.0 | Sheets | 1 | 46 | 0 |
| A0470 | A0470 | Building 1 - Level 5 - Sheathing - Exterior | 01 - Framing | 01 - Framing | 103 - Sheathing - Labor | Building 1 - Level 5 - Sheathing - Exterior | 5 | 6 | 2027-02-10 | 2027-02-16 | 2027-02-10 | 2027-02-16 | 0.0 | Not Started | 15736.88 | 0.0 | 0.0 | 0.0 | SF | 1 | 47 | 0 |
| A0480 | A0480 | Building 1 - Level 5 - Sheathing - Demising - Plywood | 01 - Framing | 01 - Framing | 104 - Shearwall - Labor | Building 1 - Level 5 - Sheathing - Demising - Plywood | 5 | 6 | 2027-02-17 | 2027-02-23 | 2027-02-17 | 2027-02-23 | 0.0 | Not Started | 5250.0 | 0.0 | 0.0 | 0.0 | Sheets | 1 | 48 | 0 |
| A0490 | A0490 | Building 1 - Level 5 - Hardware | 01 - Framing | 01 - Framing | 109 - Hardware - Labor | Building 1 - Level 5 - Hardware | 5 | 4 | 2027-02-24 | 2027-02-27 | 2027-02-24 | 2027-02-27 | 0.0 | Not Started | 15736.88 | 0.0 | 0.0 | 0.0 | SF | 1 | 49 | 0 |
| A0500 | A0500 | Building 1 - Level 5 - Punchout | 01 - Framing | 01 - Framing | 115 - Punchout - Labor | Building 1 - Level 5 - Punchout | 5 | 3 | 2027-03-01 | 2027-03-03 | 2027-03-01 | 2027-03-03 | 0.0 | Not Started | 12589.5 | 0.0 | 0.0 | 0.0 | SF | 1 | 50 | 0 |
| A0510 | A0510 | Building 1 - Roof Truss | 01 - Framing | 01 - Framing | 107 - Roof Truss - Labor | Building 1 - Roof Truss |  | 7 | 2027-03-04 | 2027-03-11 | 2027-03-04 | 2027-03-11 | 0.0 | Not Started | 129392.0 | 0.0 | 0.0 | 0.0 | SF | 1 | 51 | 0 |

Links (id, pred_id, succ_id, type, lag_days):
- 1 A0010 A0020 FS 0
- 9 A0090 A0100 FS 0
- 10 A0100 A0110 FS 0
- 11 A0110 A0120 FS 0
- 12 A0120 A0130 FS 0
- 13 A0130 A0140 FS 0
- 14 A0140 A0150 FS 0
- 15 A0150 A0160 FS 0
- 16 A0160 A0170 FS 0
- 17 A0170 A0180 FS 0
- 18 A0180 A0190 FS 0
- 19 A0190 A0200 FS 0
- 20 A0200 A0210 FS 0
- 21 A0210 A0220 FS 0
- 22 A0220 A0230 FS 0
- 23 A0230 A0240 FS 0
- 24 A0240 A0250 FS 0
- 25 A0250 A0260 FS 0
- 26 A0260 A0270 FS 0
- 27 A0270 A0280 FS 0
- 28 A0280 A0290 FS 0
- 29 A0290 A0300 FS 0
- 30 A0300 A0310 FS 0
- 31 A0310 A0320 FS 0
- 32 A0320 A0330 FS 0
- 33 A0330 A0340 FS 0
- 34 A0340 A0350 FS 0
- 35 A0350 A0360 FS 0
- 36 A0360 A0370 FS 0
- 37 A0370 A0380 FS 0
- 38 A0380 A0390 FS 0
- 39 A0390 A0400 FS 0
- 40 A0400 A0410 FS 0
- 41 A0410 A0420 FS 0
- 42 A0420 A0430 FS 0
- 43 A0430 A0440 FS 0
- 44 A0440 A0450 FS 0
- 45 A0450 A0460 FS 0
- 46 A0460 A0470 FS 0
- 47 A0470 A0480 FS 0
- 48 A0480 A0490 FS 0
- 49 A0490 A0500 FS 0
- 50 A0500 A0510 FS 0
- 59 A0020 A0060 FS 0
- 60 A0060 A0040 FF 0
- 61 A0040 A0070 FS 0
- 62 A0070 A0050 FS 0
- 63 A0050 A0080 FS 0
- 64 A0080 A0030 FS 0
- 66 A0030 A0090 FS 0
